# 04项目进度表-计划

Schedule from MS Project, 2022-09-06 to 2022-12-07, A marks actual dates.
寰�杞�涓�鍥�

## Calendars

- 标准: Mon-Fri 08:00-12:00, 13:00-17:00; Sat-Sun off. Exceptions (off unless hours are given): 2022-09-10 08:00-12:00, 13:00-17:00, 2022-10-08 to 2022-10-09 08:00-12:00, 13:00-17:00, 2022-10-22 to 2022-10-23 08:00-12:00, 13:00-17:00, 2022-10-29 to 2022-10-30 08:00-12:00, 13:00-17:00, 2022-11-05 to 2022-11-06 08:00-12:00, 13:00-17:00, 2022-11-19 to 2022-11-20 08:00-12:00, 13:00-17:00, 2022-12-03 to 2022-12-04 08:00-12:00, 13:00-17:00.

## Resources

| Resource |
| --- |
| 俞凯杰 |
| 徐嘉颖 |
| 许逸飞 |
| 沈芳莉 |
| 王松 |
| 滕润婕 |
| 杨军 |

## Schedule

| ID | WBS | Task | Type | Duration | Start | Finish | Predecessors | Complete | Remaining | Actual finish | Baseline start | Baseline finish | Baseline duration | Constraint | Resources | Work | Actual work |
| --- | --- | --- | --- | --- | --- | --- | --- | --- | --- | --- | --- | --- | --- | --- | --- | --- | --- |
| 1 | 1 | **项目进度表** |  | 80d | 2022-09-06 08:00 A | 2022-12-07 17:00 |  | 99% | 0d |  | 2020-09-28 08:00 | 2021-03-14 17:00 | 126d? |  |  | 826h | 826h |
| 2 | 1.1 | **计划阶段** |  | 4d | 2022-09-06 08:00 A | 2022-09-09 17:00 |  | 100% |  | 2022-09-09 12:00 | 2020-09-28 08:00 | 2021-03-05 11:10 | 116.4d |  |  | 32h | 32h |
| 3 | 1.1.1 | **制定总体计划** |  | 2d | 2022-09-06 08:00 A | 2022-09-07 17:00 |  | 100% |  | 2022-09-07 10:00 | 2020-09-28 08:00 | 2020-10-01 10:00 | 3.25d |  |  | 16h | 16h |
| 4 | 1.1.1.1 | 项目启动 |  | 0.05d | 2022-09-06 08:00 A | 2022-09-06 08:24 A |  | 100% |  |  | 2020-09-28 08:00 | 2020-09-28 10:00 | 0.25d | finish no earlier than 2022-04-10 17:00 | 徐嘉颖; 许逸飞 [50%]; 沈芳莉 | 1h | 1h |
| 5 | 1.1.1.2 | 确定项目范围、属性 |  | 0.06d | 2022-09-06 08:00 A | 2022-09-06 08:30 A | 4 | 100% |  |  | 2020-09-28 10:00 | 2020-09-28 12:00 | 0.25d |  | 徐嘉颖; 沈芳莉 | 1h | 1h |
| 6 | 1.1.1.3 | 确定项目生命周期 |  | 0.06d | 2022-09-06 08:00 A | 2022-09-06 08:30 A | 5 | 100% |  |  | 2020-09-28 13:00 | 2020-09-28 15:00 | 0.25d |  | 徐嘉颖; 沈芳莉 | 1h | 1h |
| 7 | 1.1.1.4 | 定义项目过程 |  | 0.12d | 2022-09-06 08:00 A | 2022-09-06 09:00 A | 6 | 100% |  |  | 2020-09-28 15:00 | 2020-09-28 17:00 | 0.25d |  | 徐嘉颖; 沈芳莉 | 2h | 2h |
| 8 | 1.1.1.5 | 估算规模、工作量及成本 |  | 0.25d | 2022-09-06 08:00 A | 2022-09-06 10:00 A | 7 | 100% |  |  | 2020-09-29 08:00 | 2020-09-29 10:00 | 0.25d | start no earlier than 2020-04-29 08:00 | 徐嘉颖 | 2h | 2h |
| 9 | 1.1.1.6 | 制定里程碑计划 |  | 0.12d | 2022-09-06 08:00 A | 2022-09-06 09:00 A | 8 | 100% |  |  | 2020-09-29 10:00 | 2020-09-29 15:00 | 0.5d | start no earlier than 2020-04-30 08:00 | 沈芳莉 | 1h | 1h |
| 10 | 1.1.1.7 | 编制预算与进度 |  | 0.12d | 2022-09-07 08:00 A | 2022-09-07 09:00 A | 9 | 100% |  |  | 2020-09-29 15:00 | 2020-09-30 10:00 | 0.5d |  |  | 1h | 1h |
| 11 | 1.1.1.8 | 风险识别与分析 |  | 0.06d | 2022-09-07 08:00 A | 2022-09-07 08:30 A | 9 | 100% |  |  | 2020-09-29 15:00 | 2020-09-29 15:48 | 0.1d |  | 徐嘉颖; 许逸飞 | 1h | 1h |
| 12 | 1.1.1.9 | 确定项目质量过程性能目标QPPO |  | 0.25d | 2022-09-07 08:00 A | 2022-09-07 10:00 A | 10 | 100% |  |  | 2020-09-30 10:00 | 2020-09-30 12:00 | 0.25d |  | 徐嘉颖 | 2h | 2h |
| 13 | 1.1.1.10 | 编写量化项目管理表 |  | 0.25d | 2022-09-07 08:00 A | 2022-09-07 10:00 A | 11 | 100% |  |  | 2020-09-29 15:48 | 2020-09-30 08:48 | 0.25d |  | 徐嘉颖 | 2h | 2h |
| 14 | 1.1.1.11 | 定制总体开发计划 |  | 0.25d | 2022-09-07 08:00 A | 2022-09-07 10:00 A | 12 | 100% |  |  | 2020-09-30 13:00 | 2020-09-30 15:00 | 0.25d | finish no earlier than 2022-01-08 17:00 | 徐嘉颖 | 2h | 2h |
| 15 | 1.1.2 | **制订从属计划** |  | 2d | 2022-09-08 08:00 A | 2022-09-09 17:00 |  | 100% |  | 2022-09-09 10:00 | 2020-10-01 08:00 | 2020-10-04 17:00 | 4d |  |  | 10h | 10h |
| 16 | 1.1.2.1 | 制订配置管理及QA计划 |  | 0.12d | 2022-09-08 08:00 A | 2022-09-08 09:00 A | 14 | 100% |  |  | 2020-09-30 15:00 | 2020-10-01 11:00 | 0.62d | start no earlier than 2021-11-25 08:00 | 王松; 许逸飞 | 2h | 2h |
| 17 | 1.1.2.2 | 制订测试计划 |  | 0.12d | 2022-09-08 08:00 A | 2022-09-08 09:00 A | 16 | 100% |  |  | 2020-10-01 11:00 | 2020-10-01 14:00 | 0.25d | start no earlier than 2020-04-28 08:00 | 徐嘉颖; 沈芳莉 | 2h | 2h |
| 18 | 1.1.2.3 | 制订资源管理计划 |  | 0.12d | 2022-09-08 08:00 A | 2022-09-08 09:00 A | 17 | 100% |  |  | 2020-10-01 14:00 | 2020-10-02 09:00 | 0.5d | finish no earlier than 2020-04-30 17:00 | 徐嘉颖 | 1h | 1h |
| 19 | 1.1.2.4 | 制订风险管理计划 |  | 0.25d | 2022-09-08 08:00 A | 2022-09-08 10:00 A | 18 | 100% |  |  | 2020-10-02 09:00 | 2020-10-02 14:00 | 0.5d | finish no earlier than 2020-04-30 17:00 | 徐嘉颖 | 2h | 2h |
| 20 | 1.1.2.5 | 完善资源管理及风险管理计划 | manual | 0.08d | 2022-09-08 08:00 A | 2022-09-08 08:37 A | 19 | 100% |  |  | 2020-10-03 08:00 | 2020-10-03 08:30 | 0.06d | start no earlier than 2022-09-08 08:00 | 徐嘉颖 | 1h | 1h |
| 21 | 1.1.2.6 | 制订干系人沟通与协调计划 |  | 0.25d | 2022-09-09 08:00 A | 2022-09-09 10:00 A | 20 | 100% |  |  | 2020-10-03 08:30 | 2020-10-03 13:30 | 0.5d | finish no earlier than 2020-04-30 17:00 | 徐嘉颖 | 2h | 2h |
| 22 | 1.1.3 | 评审项目计划 |  | 0.33d | 2022-09-09 08:00 A | 2022-09-09 12:00 A | 21 | 100% |  |  | 2020-10-03 13:30 | 2020-10-03 14:10 | 0.08d | start no earlier than 2020-04-29 08:00 | 徐嘉颖; 王松 [50%]; 俞凯杰 [50%]; 许逸飞 | 4h | 4h |
| 23 | 1.1.4 | 修改项目计划 |  | 0.12d | 2022-09-09 08:00 A | 2022-09-09 09:00 A | 22 | 100% |  |  | 2020-10-03 14:10 | 2020-10-04 11:10 | 0.75d | finish no earlier than 2020-04-30 17:00 | 徐嘉颖 | 1h | 1h |
| 24 | 1.1.5 | 审批项目计划 |  | 0.25d | 2022-09-09 08:00 A | 2022-09-09 10:00 A | 23 | 100% |  |  | 2020-10-04 11:10 | 2020-10-05 11:10 | 0.17d | finish no earlier than 2021-11-30 17:00 | 俞凯杰 [50%] | 1h | 1h |
| 25 | 1.1.6 | 计划阶段完成 | milestone | 0d | 2022-09-09 08:00 A | 2022-09-09 08:00 A |  | 100% |  |  | 2020-10-05 11:10 | 2020-10-05 11:10 | 0d | start no earlier than 2022-01-10 08:00 | 许逸飞 |  |  |

| ID | WBS | Task | Type | Duration | Start | Finish | Complete | Remaining | Baseline start | Baseline finish | Baseline duration | Total slack | Constraint | Resources | Work | Actual work |
| --- | --- | --- | --- | --- | --- | --- | --- | --- | --- | --- | --- | --- | --- | --- | --- | --- |
| 26 | 1.2 | **需求阶段** |  | 14d | 2022-09-10 08:00 A | 2022-09-28 17:00 A | 100% |  | 2020-10-06 08:00 | 2020-11-11 12:00 | 26.5d |  |  |  | 184h | 184h |
| 27 | 1.2.1 | 组建需求调研小组 |  | 1d | 2022-09-10 08:00 A | 2022-09-10 17:00 A | 100% |  | 2020-10-06 08:00 | 2020-10-06 17:00 | 1d |  | finish no earlier than 2022-09-10 17:00 | 徐嘉颖 | 8h | 8h |
| 28 | 1.2.2 | 制订需求调研计划 |  | 1d | 2022-09-12 08:00 A | 2022-09-12 17:00 A | 100% |  | 2020-10-07 08:00 | 2020-10-07 17:00 | 1d |  |  | 徐嘉颖 | 8h | 8h |
| 29 | 1.2.3 | 需求调研 | manual | 3d | 2022-09-13 08:00 A | 2022-09-15 17:00 A | 100% |  | 2020-10-07 08:00 | 2020-10-15 17:00 | 1d |  |  | 徐嘉颖 | 24h | 24h |
| 30 | 1.2.4 | 需求分析 |  | 1d | 2022-09-16 08:00 A | 2022-09-16 17:00 A | 100% |  | 2020-10-16 08:00 | 2020-10-21 17:00 | 4d |  | finish no earlier than 2022-05-06 17:00 | 徐嘉颖 | 8h | 8h |
| 31 | 1.2.5 | 编制产品规格说明书 |  | 5d | 2022-09-19 08:00 A | 2022-09-23 17:00 A | 100% |  | 2020-10-29 08:00 | 2020-11-05 17:00 | 6d |  | finish no earlier than 2022-01-23 17:00 | 徐嘉颖 [266.7%] | 88h | 88h |
| 32 | 1.2.6 | 评审产品规格说明书 |  | 1d | 2022-09-26 08:00 A | 2022-09-26 17:00 A | 100% |  | 2020-11-06 08:00 | 2020-11-09 17:00 | 2d |  | finish no earlier than 2022-09-26 17:00 | 沈芳莉; 杨军; 王松; 滕润婕; 许逸飞; 俞凯杰; 徐嘉颖 | 16h | 16h |
| 33 | 1.2.7 | 修改产品规格说明书 |  | 1d | 2022-09-27 08:00 A | 2022-09-27 17:00 A | 100% |  | 2020-11-10 08:00 | 2020-11-10 17:00 | 1d |  | start no earlier than 2020-05-20 08:00 | 徐嘉颖 | 8h | 8h |
| 34 | 1.2.8 | 确认需求规格说明书 |  | 1d | 2022-09-28 08:00 A | 2022-09-28 17:00 A | 100% |  | 2020-11-11 08:00 | 2020-11-11 10:00 | 0.25d |  | start no earlier than 2020-05-20 08:00 | 徐嘉颖; 沈芳莉 | 16h | 16h |
| 35 | 1.2.9 | 更新量化项目管理表 |  | 1d | 2022-09-28 08:00 A | 2022-09-28 17:00 A | 100% |  | 2020-11-11 10:00 | 2020-11-11 12:00 | 0.25d |  |  | 徐嘉颖 | 8h | 8h |
| 36 | 1.2.10 | 需求阶段完成 | milestone | 0d | 2022-09-28 08:00 A | 2022-09-28 08:00 A | 100% |  | 2020-11-11 10:00 | 2020-11-11 10:00 | 0d |  | start no earlier than 2020-05-21 08:00 | 许逸飞 |  |  |
| 37 | 1.3 | **设计阶段** |  | 16d | 2022-09-29 08:00 A | 2022-10-18 17:00 | 99% | 0d | 2020-11-12 08:00 | 2020-12-10 10:00 | 20.25d |  |  |  | 112h | 112h |
| 38 | 1.3.1 | 技术解决方案 |  | 2d | 2022-09-29 08:00 A | 2022-09-30 17:00 A | 100% |  | 2020-11-12 08:00 | 2020-11-16 17:00 | 3d |  | finish no earlier than 2022-01-29 17:00 | 杨军 | 16h | 16h |
| 39 | 1.3.2 | 评审技术解决方案 | manual | 1.5d | 2022-10-04 08:00 A | 2022-10-05 12:00 | 99% | 0d | 2020-11-17 08:00 | 2020-11-17 17:00 | 1d |  | start no earlier than 2022-10-04 08:00 | 王松; 沈芳莉; 滕润婕 | 24h | 24h |
| 40 | 1.3.3 | 编写设计说明书 |  | 5d | 2022-10-10 08:00 A | 2022-10-14 17:00 A | 100% |  | 2020-11-18 08:00 | 2020-12-02 17:00 | 11d |  | finish no earlier than 2022-02-05 17:00 | 杨军 | 40h | 40h |
| 41 | 1.3.4 | 评审设计说明书 | manual | 1d | 2022-10-17 08:00 A | 2022-10-17 17:00 A | 100% |  | 2020-12-03 08:00 | 2020-12-03 17:00 | 1d |  | start no earlier than 2022-10-17 08:00 | 徐嘉颖; 王松; 沈芳莉; 杨军; 滕润婕; 俞凯杰 | 24h | 24h |
| 42 | 1.3.5 | 修改确认设计说明书 |  | 0.13d | 2022-10-18 08:00 A | 2022-10-18 09:04 A | 100% |  | 2020-12-04 08:00 | 2020-12-09 17:00 | 4d |  |  | 杨军 | 4h | 4h |
| 43 | 1.3.6 | 更新量化项目管理表 |  | 0.25d | 2022-10-18 08:00 A | 2022-10-18 10:00 A | 100% |  | 2020-12-10 08:00 | 2020-12-10 10:00 | 0.25d |  |  | 徐嘉颖 | 2h | 2h |
| 44 | 1.3.7 | 设计阶段完成 |  | 0.25d | 2022-10-18 08:00 A | 2022-10-18 10:00 A | 100% |  | 2020-12-10 10:00 | 2020-12-10 10:00 | 0d |  |  | 许逸飞 | 2h | 2h |
| 45 | 1.4 | **编码阶段** |  | 21d | 2022-10-19 08:00 A | 2022-11-08 17:00 | 99% | 0d | 2020-12-11 08:00 | 2021-01-27 17:00 | 34d |  |  |  | 176h | 176h |
| 46 | 1.4.1 | 功能实现 |  | 19d | 2022-10-19 08:00 A | 2022-11-06 17:00 A | 100% |  | 2020-12-11 08:00 | 2021-01-14 17:00 | 25d |  | finish no earlier than 2022-11-06 17:00 | 滕润婕; 徐嘉颖; 杨军 | 152h | 152h |
| 47 | 1.4.2 | 代码走查 | milestone | 2d | 2022-11-07 08:00 A | 2022-11-08 17:00 | 99% | 0d | 2021-01-15 08:00 | 2021-01-21 17:00 | 5d | 25d | finish no earlier than 2022-08-18 17:00 | 滕润婕; 徐嘉颖; 杨军 | 24h | 24h |
| 48 | 1.5 | **产品集成阶段** |  | 3d | 2022-11-09 08:00 A | 2022-11-11 17:00 A | 100% |  | 2021-01-28 08:00 | 2021-02-04 17:00 | 6d |  |  |  | 26h | 26h |
| 49 | 1.5.1 | 制定产品集成方案 |  | 0.5d | 2022-11-09 08:00 A | 2022-11-09 12:00 A | 100% |  | 2021-01-28 08:00 | 2021-01-29 17:00 | 2d |  | start no earlier than 2020-07-14 08:00 | 滕润婕; 徐嘉颖 | 4h | 4h |
| 50 | 1.5.2 | 审查接口兼容性 |  | 0.5d | 2022-11-09 08:00 A | 2022-11-09 12:00 A | 100% |  | 2021-02-01 08:00 | 2021-02-02 17:00 | 2d |  |  | 滕润婕; 徐嘉颖 | 4h | 4h |
| 51 | 1.5.3 | 组装产品组件 |  | 1d | 2022-11-10 08:00 A | 2022-11-10 17:00 A | 100% |  | 2021-02-03 08:00 | 2021-02-03 12:00 | 0.5d |  |  | 滕润婕; 徐嘉颖 | 8h | 8h |
| 52 | 1.5.4 | 验证活动 |  | 0.8d | 2022-11-11 08:00 A | 2022-11-11 15:24 A | 100% |  | 2021-02-03 13:00 | 2021-02-04 12:00 | 1d |  | finish no earlier than 2022-08-26 17:00 | 滕润婕; 徐嘉颖 | 8h | 8h |
| 53 | 1.5.5 | 更新量化项目管理表 |  | 0.25d | 2022-11-11 08:00 A | 2022-11-11 17:00 A | 100% |  | 2021-02-04 17:00 | 2021-02-04 17:00 | 0d |  | start no earlier than 2021-01-29 08:00 | 徐嘉颖 | 2h | 2h |

| ID | WBS | Task | Duration | Start | Finish | Complete | Actual finish | Baseline start | Baseline finish | Baseline duration | Constraint | Resources | Work | Actual work |
| --- | --- | --- | --- | --- | --- | --- | --- | --- | --- | --- | --- | --- | --- | --- |
| 54 | 1.6 | **测试阶段** | 15d | 2022-11-14 08:00 A | 2022-11-30 17:00 | 100% | 2022-11-30 12:00 | 2021-02-05 08:00 | 2021-03-03 17:00 | 19d |  |  | 176h | 176h |
| 55 | 1.6.1 | 设计测试用例 | 3d | 2022-11-14 08:00 A | 2022-11-16 17:00 A | 100% |  | 2021-02-08 10:00 | 2021-02-12 10:00 | 4d | finish no earlier than 2021-02-03 17:00 | 沈芳莉 | 24h | 24h |
| 56 | 1.6.2 | 评审测试用例 | 1d | 2022-11-17 08:00 A | 2022-11-17 17:00 A | 100% |  | 2021-02-12 10:00 | 2021-02-12 12:00 | 0.25d |  | 沈芳莉; 徐嘉颖; 滕润婕 | 32h | 32h |
| 57 | 1.6.3 | 修改测试用例 | 1d | 2022-11-18 08:00 A | 2022-11-18 17:00 A | 100% |  | 2021-02-12 13:00 | 2021-02-15 12:00 | 1d |  | 沈芳莉 | 8h | 8h |
| 58 | 1.6.4 | 搭建测试环境 | 1d | 2022-11-19 08:00 A | 2022-11-19 17:00 A | 100% |  | 2021-02-15 13:00 | 2021-02-16 12:00 | 1d | finish no earlier than 2022-11-19 17:00 | 沈芳莉 | 8h | 8h |
| 59 | 1.6.5 | 执行测试 | 5d | 2022-11-20 08:00 A | 2022-11-24 17:00 A | 100% |  | 2021-02-16 13:00 | 2021-02-24 12:00 | 6d | finish no earlier than 2022-11-20 17:00 | 沈芳莉 | 40h | 40h |
| 60 | 1.6.6 | 修改BUG及验证 | 2d | 2022-11-25 08:00 A | 2022-11-28 17:00 A | 100% |  | 2021-02-24 13:00 | 2021-03-02 12:00 | 4d |  | 沈芳莉; 滕润婕 | 48h | 48h |
| 61 | 1.6.7 | 编写测试报告 | 1d | 2022-11-29 08:00 A | 2022-11-29 17:00 A | 100% |  | 2021-03-02 13:00 | 2021-03-02 15:00 | 0.25d | start no earlier than 2014-05-13 08:00 | 沈芳莉 | 8h | 8h |
| 62 | 1.6.8 | 更新量化项目管理表 | 0.5d | 2022-11-30 08:00 A | 2022-11-30 12:00 A | 100% |  | 2021-03-03 15:00 | 2021-03-03 17:00 | 0.25d |  | 徐嘉颖 | 4h | 4h |
| 63 | 1.6.9 | 测试完成 | 0.5d | 2022-11-30 08:00 A | 2022-11-30 12:00 A | 100% |  | 2021-03-03 17:00 | 2021-03-03 17:00 | 0d |  | 许逸飞 | 4h | 4h |
| 64 | 1.7 | **产品交付阶段** | 5d | 2022-12-01 08:00 A | 2022-12-05 17:00 | 100% | 2022-12-05 12:00 | 2021-03-04 08:00 | 2021-03-10 16:20 | 6.92d |  |  | 88h | 88h |
| 65 | 1.7.1 | 制订实施计划 | 0.5d | 2022-12-01 08:00 A | 2022-12-01 12:00 A | 100% |  | 2021-03-04 08:00 | 2021-03-04 09:00 | 0.12d | finish no earlier than 2022-10-08 17:00 | 沈芳莉; 徐嘉颖 | 8h | 8h |
| 66 | 1.7.2 | 生成材料清单 | 0.5d | 2022-12-01 08:00 A | 2022-12-01 12:00 A | 100% |  | 2021-03-04 09:00 | 2021-03-04 11:00 | 0.25d | finish no earlier than 2022-10-08 17:00 | 沈芳莉; 徐嘉颖 | 8h | 8h |
| 67 | 1.7.3 | 开发安装程序 | 1d | 2022-12-02 08:00 A | 2022-12-02 17:00 A | 100% |  | 2021-03-04 11:00 | 2021-03-04 12:00 | 0.12d | finish no earlier than 2022-10-09 17:00 | 沈芳莉; 徐嘉颖 | 16h | 16h |
| 68 | 1.7.4 | 编写用户手册 | 1d | 2022-12-02 08:00 A | 2022-12-02 17:00 A | 100% |  | 2021-03-07 08:00 | 2021-03-07 10:00 | 0.25d | finish no earlier than 2022-04-02 17:00 | 滕润婕 | 8h | 8h |
| 69 | 1.7.5 | 系统安装与初始化 | 1d | 2022-12-03 08:00 A | 2022-12-03 17:00 A | 100% |  | 2021-03-08 08:00 | 2021-03-08 12:00 | 0.5d | finish no earlier than 2022-12-03 17:00 | 沈芳莉; 徐嘉颖 | 16h | 16h |
| 70 | 1.7.6 | 系统试运行 | 1d | 2022-12-04 08:00 A | 2022-12-04 17:00 A | 100% |  | 2021-03-09 08:00 | 2021-03-09 17:00 | 1d | finish no earlier than 2022-12-04 17:00 | 沈芳莉; 滕润婕 | 24h | 24h |
| 71 | 1.7.7 | 更新量化项目管理表 | 0.5d | 2022-12-05 08:00 A | 2022-12-05 12:00 A | 100% |  | 2021-03-10 08:00 | 2021-03-10 10:00 | 0.25d |  | 徐嘉颖 | 4h | 4h |
| 72 | 1.7.8 | 系统正式上线 | 0.17d | 2022-12-05 08:00 A | 2022-12-05 09:20 A | 100% |  | 2021-03-10 10:00 | 2021-03-10 16:20 | 0.67d | finish no earlier than 2020-07-27 17:00 | 沈芳莉; 滕润婕 | 4h | 4h |
| 73 | 1.8 | **结项活动** | 2d | 2022-12-06 08:00 A | 2022-12-07 17:00 | 100% | 2022-12-07 15:00 | 2021-03-11 08:00 | 2021-03-14 12:00 | 3.5d |  |  | 32h | 32h |
| 74 | 1.8.1 | 项目分析 | 1d | 2022-12-06 08:00 A | 2022-12-06 17:00 A | 100% |  | 2021-03-11 08:00 | 2021-03-11 10:00 | 0.25d | start no earlier than 2021-03-11 08:00 | 徐嘉颖; 沈芳莉 | 16h | 16h |
| 75 | 1.8.2 | 项目成果移交 | 0.5d | 2022-12-07 08:00 A | 2022-12-07 15:00 A | 100% |  | 2021-03-13 15:00 | 2021-03-13 17:00 | 0.25d | finish no earlier than 2021-03-13 17:00 | 沈芳莉; 徐嘉颖 | 8h | 8h |
| 76 | 1.8.3 | 更新量化项目管理表 | 0.25d | 2022-12-07 08:00 A | 2022-12-07 10:00 A | 100% |  | 2021-03-14 08:00 | 2021-03-14 10:00 | 0.25d |  | 徐嘉颖; 沈芳莉 | 4h | 4h |
| 77 | 1.8.4 | 项目总结会关闭项目并转为项目支持 | 0.25d | 2022-12-07 08:00 A | 2022-12-07 10:00 A | 100% |  | 2021-03-14 10:00 | 2021-03-14 12:00 | 0.25d |  | 徐嘉颖; 沈芳莉 | 4h | 4h |
