# 04项目进度表-计划

Schedule from MS Project, 2022-06-19 to 2022-12-04, A marks actual dates.
寰�杞�涓�鍥�

## Calendars

- 标准: Mon-Fri 08:00-12:00, 13:00-17:00; Sat-Sun off. Exceptions (off unless hours are given): 2022-06-19 08:00-12:00, 13:00-17:00, 2022-10-08 to 2022-10-09 08:00-12:00, 13:00-17:00, 2022-12-04 08:00-12:00, 13:00-17:00.

## Resources

| Resource |
| --- |
| 叶冬梅 |
| 沈心玥 |
| 许逸飞 |
| 沈芳莉 |
| 王凯迪 |
| 王松 |
| 戴震 |

## Schedule

| ID | WBS | Task | Duration | Start | Finish | Predecessors | Complete | Actual finish | Baseline start | Baseline finish | Baseline duration | Constraint | Resources | Work | Actual work |
| --- | --- | --- | --- | --- | --- | --- | --- | --- | --- | --- | --- | --- | --- | --- | --- |
| 1 | 1 | **项目进度表** | 124d | 2022-06-19 08:00 A | 2022-12-04 17:00 A |  | 100% |  | 2020-09-28 08:00 | 2021-03-14 17:00 | 126d? |  |  | 1652h | 1652h |
| 2 | 1.1 | **计划阶段** | 6d | 2022-06-19 08:00 A | 2022-06-24 17:00 A |  | 100% |  | 2020-09-28 08:00 | 2021-03-05 11:10 | 116.4d |  |  | 74h | 74h |
| 3 | 1.1.1 | **制定总体计划** | 4d | 2022-06-19 08:00 A | 2022-06-22 17:00 |  | 100% | 2022-06-22 15:00 | 2020-09-28 08:00 | 2020-10-01 10:00 | 3.25d |  |  | 39h | 39h |
| 4 | 1.1.1.1 | 项目启动 | 0.95d | 2022-06-19 08:00 A | 2022-06-19 16:35 A |  | 100% |  | 2020-09-28 08:00 | 2020-09-28 10:00 | 0.25d | finish no earlier than 2022-06-19 17:00 | 沈心玥; 许逸飞 [50%]; 沈芳莉; 王凯迪; 戴震; 王松; 叶冬梅 | 7h | 7h |
| 5 | 1.1.1.2 | 确定项目范围、属性 | 0.25d | 2022-06-20 08:00 A | 2022-06-20 10:00 A | 4 | 100% |  | 2020-09-28 10:00 | 2020-09-28 12:00 | 0.25d |  | 沈心玥; 沈芳莉 | 4h | 4h |
| 6 | 1.1.1.3 | 确定项目生命周期 | 0.12d | 2022-06-20 08:00 A | 2022-06-20 10:20 A | 5 | 100% |  | 2020-09-28 13:00 | 2020-09-28 15:00 | 0.25d |  | 沈心玥; 王凯迪; 沈芳莉 | 3h | 3h |
| 7 | 1.1.1.4 | 定义项目过程 | 0.12d | 2022-06-20 08:00 A | 2022-06-20 10:40 A | 6 | 100% |  | 2020-09-28 15:00 | 2020-09-28 17:00 | 0.25d |  | 沈心玥; 王凯迪; 沈芳莉 | 3h | 3h |
| 8 | 1.1.1.5 | 估算规模、工作量及成本 | 0.25d | 2022-06-20 08:00 A | 2022-06-20 10:00 A | 7 | 100% |  | 2020-09-29 08:00 | 2020-09-29 10:00 | 0.25d | start no earlier than 2020-04-29 08:00 | 沈心玥 | 2h | 2h |
| 9 | 1.1.1.6 | 制定里程碑计划 | 0.25d | 2022-06-21 08:00 A | 2022-06-21 10:00 A | 8 | 100% |  | 2020-09-29 10:00 | 2020-09-29 15:00 | 0.5d | start no earlier than 2020-04-30 08:00 | 沈心玥 | 2h | 2h |
| 10 | 1.1.1.7 | 编制预算与进度 | 0.25d | 2022-06-21 08:00 A | 2022-06-21 10:00 A | 9 | 100% |  | 2020-09-29 15:00 | 2020-09-30 10:00 | 0.5d |  | 沈心玥 | 2h | 2h |
| 11 | 1.1.1.8 | 风险识别与分析 | 0.25d | 2022-06-21 08:00 A | 2022-06-21 11:20 A | 9 | 100% |  | 2020-09-29 15:00 | 2020-09-29 15:48 | 0.1d | finish no earlier than 2021-11-17 10:00 | 沈心玥; 许逸飞; 王凯迪 | 6h | 6h |
| 12 | 1.1.1.9 | 确定项目质量过程性能目标QPPO | 0.25d | 2022-06-21 08:00 A | 2022-06-21 10:00 A | 10 | 100% |  | 2020-09-30 10:00 | 2020-09-30 12:00 | 0.25d |  | 沈心玥 | 2h | 2h |
| 13 | 1.1.1.10 | 编写量化项目管理表 | 0.25d | 2022-06-22 08:00 A | 2022-06-22 10:00 A | 11 | 100% |  | 2020-09-29 15:48 | 2020-09-30 08:48 | 0.25d |  | 沈心玥 | 2h | 2h |
| 14 | 1.1.1.11 | 定制总体开发计划 | 0.75d | 2022-06-22 08:00 A | 2022-06-22 15:00 A | 12 | 100% |  | 2020-09-30 13:00 | 2020-09-30 15:00 | 0.25d | finish no earlier than 2021-11-18 17:00 | 沈心玥 | 6h | 6h |
| 15 | 1.1.2 | **制订从属计划** | 2d | 2022-06-23 08:00 A | 2022-06-24 17:00 |  | 100% | 2022-06-24 10:00 | 2020-10-01 08:00 | 2020-10-04 17:00 | 4d |  |  | 12h | 12h |
| 16 | 1.1.2.1 | 制订配置管理及QA计划 | 0.25d | 2022-06-23 08:00 A | 2022-06-23 10:00 A | 14 | 100% |  | 2020-09-30 15:00 | 2020-10-01 11:00 | 0.62d | finish no earlier than 2021-09-11 17:00 | 王松; 许逸飞 | 4h | 4h |
| 17 | 1.1.2.2 | 制订测试计划 | 0.25d | 2022-06-23 08:00 A | 2022-06-23 10:00 A |  | 100% |  | 2020-10-01 11:00 | 2020-10-01 14:00 | 0.25d | start no earlier than 2021-09-11 08:00 | 沈芳莉 | 2h | 2h |
| 18 | 1.1.2.3 | 制订资源管理计划 | 0.25d | 2022-06-23 08:00 A | 2022-06-23 10:00 A | 17 | 100% |  | 2020-10-01 14:00 | 2020-10-02 09:00 | 0.5d | finish no earlier than 2021-04-15 17:00 | 沈心玥 | 2h | 2h |
| 19 | 1.1.2.4 | 制订风险管理计划 | 0.25d | 2022-06-23 08:00 A | 2022-06-23 10:00 A | 18 | 100% |  | 2020-10-02 09:00 | 2020-10-02 14:00 | 0.5d | finish no earlier than 2020-04-30 17:00 | 沈心玥 | 2h | 2h |
| 20 | 1.1.2.5 | 制订干系人沟通与协调计划 | 0.25d | 2022-06-24 08:00 A | 2022-06-24 10:00 A | 19 | 100% |  | 2020-10-03 08:30 | 2020-10-03 13:30 | 0.5d | finish no earlier than 2020-04-30 17:00 | 沈心玥 | 2h | 2h |
| 21 | 1.1.3 | 评审项目计划 | 0.56d | 2022-06-24 08:00 A | 2022-06-24 17:00 A | 20 | 100% |  | 2020-10-03 13:30 | 2020-10-03 14:10 | 0.08d | start no earlier than 2020-04-29 08:00 | 沈芳莉; 沈心玥; 王凯迪; 王松 [50%]; 叶冬梅 [50%]; 戴震 | 17h | 17h |
| 22 | 1.1.4 | 修改项目计划 | 0.25d | 2022-06-24 08:00 A | 2022-06-24 10:00 A | 21 | 100% |  | 2020-10-03 14:10 | 2020-10-04 11:10 | 0.75d | finish no earlier than 2020-04-30 17:00 | 沈心玥 | 2h | 2h |
| 23 | 1.1.5 | 审批项目计划 | 0.5d | 2022-06-24 08:00 A | 2022-06-24 14:45 A | 22 | 100% |  | 2020-10-04 11:10 | 2020-10-05 11:10 | 0.17d | finish no earlier than 2021-04-19 17:00 | 叶冬梅 [50%] | 2h | 2h |
| 24 | 1.1.6 | 计划阶段完成 | 0.25d | 2022-06-24 14:45 A | 2022-06-24 16:45 A | 23 | 100% |  | 2020-10-05 11:10 | 2020-10-05 11:10 | 0d | start no earlier than 2022-03-09 08:00 | 许逸飞 | 2h | 2h |

| ID | WBS | Task | Type | Duration | Start | Finish | Predecessors | Complete | Actual finish | Baseline start | Baseline finish | Baseline duration | Constraint | Resources | Work | Actual work |
| --- | --- | --- | --- | --- | --- | --- | --- | --- | --- | --- | --- | --- | --- | --- | --- | --- |
| 25 | 1.2 | **需求阶段** |  | 23d | 2022-06-27 08:00 A | 2022-07-27 17:00 |  | 100% | 2022-07-27 12:00 | 2020-10-06 08:00 | 2020-11-11 12:00 | 26.5d |  |  | 284h | 284h |
| 26 | 1.2.1 | 组建需求调研小组 |  | 1d | 2022-06-27 08:00 A | 2022-06-27 17:00 A | 24 | 100% |  | 2020-10-06 08:00 | 2020-10-06 17:00 | 1d | start no earlier than 2021-09-14 08:00 | 沈心玥 | 8h | 8h |
| 27 | 1.2.2 | 制订需求调研计划 |  | 1d | 2022-06-28 08:00 A | 2022-06-28 17:00 A | 24 | 100% |  | 2020-10-07 08:00 | 2020-10-07 17:00 | 1d | start no earlier than 2021-09-14 08:00 | 沈心玥 | 8h | 8h |
| 28 | 1.2.3 | 需求调研 | manual | 5d | 2022-06-29 08:00 A | 2022-07-05 17:00 A | 24 | 100% |  | 2020-10-07 08:00 | 2020-10-15 17:00 | 1d |  | 沈心玥 | 40h | 40h |
| 29 | 1.2.4 | 需求分析 |  | 3d | 2022-07-06 08:00 A | 2022-07-08 17:00 A | 28 | 100% |  | 2020-10-16 08:00 | 2020-10-21 17:00 | 4d | start no earlier than 2021-09-18 08:00 | 沈心玥 | 24h | 24h |
| 30 | 1.2.5 | 编制产品规格说明书 |  | 9d | 2022-07-11 08:00 A | 2022-07-21 17:00 A | 29 | 100% |  | 2020-10-29 08:00 | 2020-11-05 17:00 | 6d | finish no earlier than 2021-09-26 17:00 | 沈心玥 [180%] | 72h | 72h |
| 31 | 1.2.6 | 评审产品规格说明书 |  | 2d | 2022-07-22 08:00 A | 2022-07-25 17:00 A | 30 | 100% |  | 2020-11-06 08:00 | 2020-11-09 17:00 | 2d | finish no earlier than 2021-10-02 17:00 | 沈心玥; 王凯迪; 沈芳莉; 王松; 戴震 | 112h | 112h |
| 32 | 1.2.7 | 修改产品规格说明书 |  | 1d | 2022-07-26 08:00 A | 2022-07-26 17:00 A | 31 | 100% |  | 2020-11-10 08:00 | 2020-11-10 17:00 | 1d | finish no earlier than 2021-10-03 17:00 | 王凯迪 | 8h | 8h |
| 33 | 1.2.8 | 确认需求规格说明书 |  | 0.25d | 2022-07-27 08:00 A | 2022-07-27 10:00 A | 32 | 100% |  | 2020-11-11 08:00 | 2020-11-11 10:00 | 0.25d | start no earlier than 2020-05-20 08:00 | 沈心玥; 沈芳莉; 王凯迪 | 6h | 6h |
| 34 | 1.2.9 | 更新量化项目管理表 |  | 0.5d | 2022-07-27 08:00 A | 2022-07-27 12:00 A | 33 | 100% |  | 2020-11-11 10:00 | 2020-11-11 12:00 | 0.25d |  | 沈心玥 | 4h | 4h |
| 35 | 1.2.10 | 需求阶段完成 |  | 0.25d | 2022-07-27 08:00 A | 2022-07-27 10:00 A | 33 | 100% |  | 2020-11-11 10:00 | 2020-11-11 10:00 | 0d | finish no earlier than 2022-06-27 17:00 | 许逸飞 | 2h | 2h |
| 36 | 1.3 | **设计阶段** |  | 24d | 2022-07-28 08:00 A | 2022-08-30 17:00 A | 25 | 100% |  | 2020-11-12 08:00 | 2020-12-10 10:00 | 20.25d |  |  | 312h | 312h |
| 37 | 1.3.1 | 技术解决方案 |  | 2d | 2022-07-28 08:00 A | 2022-07-29 17:00 A | 35 | 100% |  | 2020-11-12 08:00 | 2020-11-16 17:00 | 3d | start no earlier than 2020-11-12 08:00 | 王凯迪 | 16h | 16h |
| 38 | 1.3.2 | 评审技术解决方案 |  | 1d | 2022-08-01 08:00 A | 2022-08-01 17:00 A | 37 | 100% |  | 2020-11-17 08:00 | 2020-11-17 17:00 | 1d | start no earlier than 2020-11-12 08:00 | 王凯迪; 王松; 沈芳莉; 许逸飞; 戴震; 沈心玥 | 64h | 64h |
| 39 | 1.3.3 | UI设计、数据库设计 |  | 8d | 2022-08-02 08:00 A | 2022-08-11 17:00 A | 38 | 100% |  | 2020-11-18 08:00 | 2020-12-02 17:00 | 11d | start no earlier than 2020-11-13 08:00 | 王凯迪 | 64h | 64h |
| 40 | 1.3.4 | 详细设计、接口设计 |  | 10d | 2022-08-12 08:00 A | 2022-08-25 17:00 A | 39 | 100% |  |  |  |  | finish no earlier than 2021-10-15 17:00 | 王凯迪 | 80h | 80h |
| 41 | 1.3.5 | 评审概要、详细设计 |  | 1d | 2022-08-26 08:00 A | 2022-08-26 17:00 A | 40 | 100% |  | 2020-12-03 08:00 | 2020-12-03 17:00 | 1d | finish no earlier than 2021-10-23 17:00 | 沈心玥; 王凯迪; 王松; 沈芳莉; 许逸飞; 戴震 | 64h | 64h |
| 42 | 1.3.6 | 修改概要、详细设计 |  | 1d | 2022-08-29 08:00 A | 2022-08-29 17:00 A | 41 | 100% |  | 2020-12-04 08:00 | 2020-12-09 17:00 | 4d |  | 王凯迪 [200%] | 16h | 16h |
| 43 | 1.3.7 | 确认设计文档 |  | 1d | 2022-08-30 08:00 A | 2022-08-30 17:00 A | 42 | 100% |  |  |  |  |  | 沈心玥 [50%] | 4h | 4h |
| 44 | 1.3.8 | 更新量化项目管理表 |  | 0.25d | 2022-08-30 08:00 A | 2022-08-30 10:00 A | 43 | 100% |  | 2020-12-10 08:00 | 2020-12-10 10:00 | 0.25d |  | 沈心玥 | 2h | 2h |
| 45 | 1.3.9 | 设计阶段完成 |  | 0.25d | 2022-08-30 08:00 A | 2022-08-30 10:00 A | 44 | 100% |  | 2020-12-10 10:00 | 2020-12-10 10:00 | 0d |  | 许逸飞 | 2h | 2h |
| 46 | 1.4 | **编码阶段** |  | 31d | 2022-08-31 08:00 A | 2022-10-10 17:00 A |  | 100% |  | 2020-12-11 08:00 | 2021-01-27 17:00 | 34d |  |  | 432h | 432h |
| 47 | 1.4.1 | 功能实现 | manual | 23d | 2022-08-31 08:00 A | 2022-09-30 17:00 A |  | 100% |  | 2020-12-11 08:00 | 2021-01-14 17:00 | 25d |  | 戴震; 王凯迪; 沈心玥 | 376h | 376h |
| 48 | 1.4.2 | 代码走查 | manual | 3d | 2022-10-08 08:00 A | 2022-10-10 17:00 A |  | 100% |  | 2021-01-15 08:00 | 2021-01-21 17:00 | 5d | start no earlier than 2022-10-08 08:00 | 戴震; 王凯迪; 沈心玥 | 56h | 56h |

| ID | WBS | Task | Type | Duration | Start | Finish | Predecessors | Complete | Actual finish | Baseline start | Baseline finish | Baseline duration | Constraint | Resources | Work | Actual work |
| --- | --- | --- | --- | --- | --- | --- | --- | --- | --- | --- | --- | --- | --- | --- | --- | --- |
| 49 | 1.5 | **产品集成阶段** |  | 4d | 2022-10-11 08:00 A | 2022-10-14 17:00 A |  | 100% |  | 2021-01-28 08:00 | 2021-02-04 17:00 | 6d |  |  | 58h | 58h |
| 50 | 1.5.1 | 制定产品集成方案 |  | 0.5d | 2022-10-11 08:00 A | 2022-10-11 12:00 A |  | 100% |  | 2021-01-28 08:00 | 2021-01-29 17:00 | 2d | finish no earlier than 2022-02-13 17:00 | 戴震; 王凯迪 | 8h | 8h |
| 51 | 1.5.2 | 审查接口兼容性 |  | 0.5d | 2022-10-11 13:00 A | 2022-10-11 17:00 A | 50 | 100% |  | 2021-02-01 08:00 | 2021-02-02 17:00 | 2d | finish no earlier than 2022-10-11 17:00 | 戴震; 王凯迪 | 8h | 8h |
| 52 | 1.5.3 | 组装产品组件 |  | 1.5d | 2022-10-12 08:00 A | 2022-10-13 15:00 A | 51 | 100% |  | 2021-02-03 08:00 | 2021-02-03 12:00 | 0.5d | finish no earlier than 2022-09-13 17:00 | 戴震; 王凯迪 | 22h | 22h |
| 53 | 1.5.4 | 验证活动 |  | 1d | 2022-10-13 08:00 A | 2022-10-14 12:00 A | 52 | 100% |  | 2021-02-03 13:00 | 2021-02-04 12:00 | 1d | finish no earlier than 2021-11-21 17:00 | 戴震; 王凯迪 | 16h | 16h |
| 54 | 1.5.5 | 更新量化项目管理表 |  | 0.5d | 2022-10-14 08:00 A | 2022-10-14 17:00 A | 53 | 100% |  | 2021-02-04 17:00 | 2021-02-04 17:00 | 0d | finish no earlier than 2022-09-15 17:00 | 沈心玥 | 4h | 4h |
| 55 | 1.6 | **测试阶段** |  | 28d | 2022-10-17 08:00 A | 2022-11-23 17:00 A |  | 100% |  | 2021-02-05 08:00 | 2021-03-03 17:00 | 19d |  |  | 316h | 316h |
| 56 | 1.6.1 | 设计测试用例 |  | 6d | 2022-10-17 08:00 A | 2022-10-24 17:00 A | 54 | 100% |  | 2021-02-08 10:00 | 2021-02-12 10:00 | 4d | finish no earlier than 2021-02-03 17:00 | 沈芳莉 | 48h | 48h |
| 57 | 1.6.2 | 评审测试用例 |  | 1d | 2022-10-25 08:00 A | 2022-10-25 17:00 A | 56 | 100% |  | 2021-02-12 10:00 | 2021-02-12 12:00 | 0.25d |  | 沈芳莉; 沈心玥; 戴震; 王凯迪 | 48h | 48h |
| 58 | 1.6.3 | 修改测试用例 |  | 1d | 2022-10-26 08:00 A | 2022-10-26 17:00 A | 57 | 100% |  | 2021-02-12 13:00 | 2021-02-15 12:00 | 1d |  | 沈芳莉 | 8h | 8h |
| 59 | 1.6.4 | 搭建测试环境 |  | 2d | 2022-10-27 08:00 A | 2022-10-28 17:00 A | 58 | 100% |  | 2021-02-15 13:00 | 2021-02-16 12:00 | 1d | finish no earlier than 2021-11-28 17:00 | 沈芳莉 | 16h | 16h |
| 60 | 1.6.5 | 执行测试 |  | 10d | 2022-10-31 08:00 A | 2022-11-15 17:00 A | 59 | 100% |  | 2021-02-16 13:00 | 2021-02-24 12:00 | 6d | start no earlier than 2014-05-13 08:00 | 沈芳莉 | 80h | 80h |
| 61 | 1.6.6 | 修改BUG及验证 |  | 4d | 2022-11-16 08:00 A | 2022-11-21 17:00 A | 60 | 100% |  | 2021-02-24 13:00 | 2021-03-02 12:00 | 4d |  | 沈芳莉; 戴震 | 96h | 96h |
| 62 | 1.6.7 | 编写测试报告 |  | 2d | 2022-11-22 08:00 A | 2022-11-23 17:00 A | 61 | 100% |  | 2021-03-02 13:00 | 2021-03-02 15:00 | 0.25d | finish no earlier than 2021-12-12 17:00 | 沈芳莉 | 16h | 16h |
| 63 | 1.6.8 | 更新量化项目管理表 |  | 0.5d | 2022-11-23 08:00 A | 2022-11-23 12:00 A | 62 | 100% |  | 2021-03-03 15:00 | 2021-03-03 17:00 | 0.25d |  | 沈心玥 | 4h | 4h |
| 64 | 1.6.9 | 测试完成 | milestone, manual | 0d | 2022-11-23 13:00 A | 2022-11-23 17:00 A | 63 | 100% |  | 2021-03-03 17:00 | 2021-03-03 17:00 | 0d | finish no earlier than 2022-11-23 17:00 | 许逸飞 |  |  |
| 65 | 1.7 | **产品交付阶段** |  | 5d | 2022-11-24 08:00 A | 2022-11-30 17:00 |  | 100% | 2022-11-30 16:45 | 2021-03-04 08:00 | 2021-03-10 16:20 | 6.92d |  |  | 104h | 104h |
| 66 | 1.7.1 | 制订实施计划 |  | 0.5d | 2022-11-24 08:00 A | 2022-11-24 12:00 A | 64 | 100% |  | 2021-03-04 08:00 | 2021-03-04 09:00 | 0.12d | start no earlier than 2021-10-01 08:00 | 沈芳莉; 沈心玥; 戴震 | 16h | 16h |
| 67 | 1.7.2 | 生成材料清单 |  | 0.5d | 2022-11-24 08:00 A | 2022-11-24 17:00 A | 66 | 100% |  | 2021-03-04 09:00 | 2021-03-04 11:00 | 0.25d | start no earlier than 2014-05-21 08:00 | 沈芳莉; 沈心玥 | 8h | 8h |
| 68 | 1.7.3 | 开发安装程序 |  | 1d | 2022-11-25 08:00 A | 2022-11-25 17:00 A | 67 | 100% |  | 2021-03-04 11:00 | 2021-03-04 12:00 | 0.12d | start no earlier than 2014-05-21 08:00 | 沈芳莉; 沈心玥 | 24h | 24h |
| 69 | 1.7.4 | 编写用户手册 |  | 1d | 2022-11-25 08:00 A | 2022-11-25 17:00 A | 68 | 100% |  | 2021-03-07 08:00 | 2021-03-07 10:00 | 0.25d | finish no earlier than 2021-12-17 17:00 | 戴震 | 8h | 8h |
| 70 | 1.7.5 | 系统安装与初始化 |  | 1d | 2022-11-28 08:00 A | 2022-11-28 17:00 A |  | 100% |  | 2021-03-08 08:00 | 2021-03-08 12:00 | 0.5d | start no earlier than 2021-10-04 08:00 | 沈芳莉; 沈心玥 | 16h | 16h |
| 71 | 1.7.6 | 系统试运行 |  | 1d | 2022-11-29 08:00 A | 2022-11-29 17:00 A | 70 | 100% |  | 2021-03-09 08:00 | 2021-03-09 17:00 | 1d | finish no earlier than 2021-12-18 17:00 | 沈芳莉; 戴震 | 24h | 24h |
| 72 | 1.7.7 | 更新量化项目管理表 |  | 0.25d | 2022-11-30 08:00 A | 2022-11-30 12:00 A | 71 | 100% |  | 2021-03-10 08:00 | 2021-03-10 10:00 | 0.25d | start no earlier than 2021-10-08 08:00 | 沈心玥 | 2h | 2h |
| 73 | 1.7.8 | 系统正式上线 |  | 0.25d | 2022-11-30 08:00 A | 2022-11-30 16:45 A | 72 | 100% |  | 2021-03-10 10:00 | 2021-03-10 16:20 | 0.67d | finish no earlier than 2022-11-30 17:00 | 戴震; 沈芳莉; 沈心玥 | 6h | 6h |

| ID | WBS | Task | Duration | Start | Finish | Predecessors | Complete | Baseline start | Baseline finish | Baseline duration | Constraint | Resources | Work | Actual work |
| --- | --- | --- | --- | --- | --- | --- | --- | --- | --- | --- | --- | --- | --- | --- |
| 74 | 1.8 | **结项活动** | 3d | 2022-12-01 08:00 A | 2022-12-04 17:00 A | 73 | 100% | 2021-03-11 08:00 | 2021-03-14 12:00 | 3.5d |  |  | 72h | 72h |
| 75 | 1.8.1 | 项目分析 | 1d | 2022-12-01 08:00 A | 2022-12-01 17:00 A |  | 100% | 2021-03-11 08:00 | 2021-03-11 10:00 | 0.25d | start no earlier than 2021-10-11 08:00 | 沈心玥; 沈芳莉 | 16h | 16h |
| 76 | 1.8.2 | 项目成果移交 | 1d | 2022-12-02 08:00 A | 2022-12-02 17:00 A | 75 | 100% | 2021-03-13 15:00 | 2021-03-13 17:00 | 0.25d | start no earlier than 2021-10-12 08:00 | 沈芳莉; 沈心玥 | 16h | 16h |
| 77 | 1.8.3 | 更新量化项目管理表 | 1d | 2022-12-02 08:00 A | 2022-12-02 17:00 A |  | 100% | 2021-03-14 08:00 | 2021-03-14 10:00 | 0.25d | start no earlier than 2021-10-12 08:00 | 沈心玥; 沈芳莉 | 16h | 16h |
| 78 | 1.8.4 | 项目总结会关闭项目并转为项目支持 | 1d | 2022-12-04 08:00 A | 2022-12-04 17:00 A |  | 100% | 2021-03-14 10:00 | 2021-03-14 12:00 | 0.25d | finish no earlier than 2022-12-04 17:00 | 沈心玥; 沈芳莉; 许逸飞 | 24h | 24h |
