# 04项目进度表-实际

Schedule from MS Project, 2022-03-10 to 2022-07-24, status date 2013-08-09, A marks actual dates.
Sky123.Org

## Calendars

- 标准: Mon-Fri 08:00-12:00, 13:00-17:00; Sat-Sun off. Exceptions (off unless hours are given): 2022-03-12 to 2022-03-13 08:00-12:00, 13:00-17:00, 2022-03-20 08:00-12:00, 13:00-17:00, 2022-04-02 to 2022-04-03 08:00-12:00, 13:00-17:00, 2022-04-16 08:00-12:00, 13:00-17:00, 2022-07-16 08:00-12:00, 13:00-17:00, 2022-07-23 to 2022-07-24 08:00-12:00, 13:00-17:00.

## Resources

| Resource |
| --- |
| 王宇帆 |
| 叶冬梅 |
| 沈芳莉 |
| 魏鹏 |
| 王松 |
| 许逸飞 |
| 姚强 |

## Schedule

| ID | WBS | Task | Type | Duration | Start | Finish | Predecessors | Complete | Actual finish | Baseline start | Baseline finish | Baseline duration | Constraint | Resources | Work | Actual work |
| --- | --- | --- | --- | --- | --- | --- | --- | --- | --- | --- | --- | --- | --- | --- | --- | --- |
| 1 | 1 | **项目进度表** |  | 106d | 2022-03-10 08:00 A | 2022-07-24 17:00 A |  | 100% |  | 2021-03-17 08:00 | 2021-07-28 11:10 | 115.4d |  |  | 1058.1h | 1058.1h |
| 2 | 1.1 | **项目计划阶段** |  | 8d | 2022-03-10 08:00 A | 2022-03-17 17:00 |  | 100% | 2022-03-17 12:00 | 2021-03-17 08:00 | 2021-03-24 12:00 | 7.5d |  |  | 68h | 68h |
| 3 | 1.1.1 | 立项申请 |  | 0.5d | 2022-03-10 08:00 A | 2022-03-10 12:00 A |  | 100% |  | 2021-03-17 08:00 | 2021-03-17 12:00 | 0.5d | finish no earlier than 2022-04-15 17:00 | 王宇帆 | 4h | 4h |
| 4 | 1.1.2 | 立项审批 |  | 0.5d | 2022-03-10 08:00 A | 2022-03-10 16:00 A | 3 | 100% |  | 2021-03-17 13:00 | 2021-03-17 14:00 | 0.12d | start no earlier than 2020-08-17 08:00 | 王宇帆 | 4h | 4h |
| 5 | 1.1.3 | 确定项目范围、属性 |  | 0.5d | 2022-03-11 08:00 A | 2022-03-11 12:00 A | 4 | 100% |  | 2021-03-17 14:00 | 2021-03-17 16:00 | 0.25d | start no earlier than 2020-08-17 08:00 | 王宇帆 | 4h | 4h |
| 6 | 1.1.4 | 确定项目生命周期 |  | 0.5d | 2022-03-11 08:00 A | 2022-03-11 16:00 A | 5 | 100% |  | 2021-03-17 16:00 | 2021-03-17 17:00 | 0.12d | start no earlier than 2020-08-17 08:00 | 王宇帆 | 4h | 4h |
| 7 | 1.1.5 | 定义项目过程 |  | 0.5d | 2022-03-14 08:00 A | 2022-03-14 12:00 A | 6 | 100% |  | 2021-03-18 08:00 | 2021-03-18 10:00 | 0.25d | finish no earlier than 2021-11-20 17:00 | 王宇帆 | 4h | 4h |
| 8 | 1.1.6 | 估算规模、工作量及成本 |  | 0.17d | 2022-03-14 08:00 A | 2022-03-14 13:20 A | 7 | 100% |  | 2021-03-18 10:00 | 2021-03-18 14:50 | 0.25d | start no earlier than 2013-02-19 08:00 | 王宇帆; 魏鹏; 沈芳莉 | 4h | 4h |
| 9 | 1.1.7 | 制订里程碑计划 |  | 0.25d | 2022-03-15 08:00 A | 2022-03-15 10:00 A |  | 100% |  | 2021-03-18 14:50 | 2021-03-18 15:50 | 0.12d | finish no earlier than 2021-11-21 17:00 | 王宇帆 | 2h | 2h |
| 10 | 1.1.8 | 编制预算与进度 |  | 0.25d | 2022-03-15 08:00 A | 2022-03-15 10:00 A | 9 | 100% |  | 2021-03-18 15:50 | 2021-03-19 08:50 | 0.25d |  | 王宇帆 | 2h | 2h |
| 11 | 1.1.9 | 风险识别与分析 |  | 0.25d | 2022-03-15 08:00 A | 2022-03-15 10:00 A | 10 | 100% |  | 2021-03-19 08:50 | 2021-03-19 13:50 | 0.5d |  | 王宇帆 | 2h | 2h |
| 12 | 1.1.10 | 确定项目质量过程性能目标QPPO | manual | 0.25d | 2022-03-15 08:00 A | 2022-03-16 09:00 A | 11 | 100% |  | 2021-03-19 13:50 | 2021-03-19 15:50 | 0.25d | start no earlier than 2022-03-15 08:00 | 王宇帆 | 2h | 2h |
| 13 | 1.1.11 | 编写量化项目管理表 |  | 0.5d | 2022-03-16 08:00 A | 2022-03-16 12:00 A |  | 100% |  | 2021-03-20 08:00 | 2021-03-20 17:00 | 1d | finish no earlier than 2021-03-20 17:00 | 王宇帆 | 4h | 4h |
| 14 | 1.1.12 | 制订总体开发计划 |  | 1d | 2022-03-16 08:00 A | 2022-03-16 17:00 A | 13 | 100% |  | 2021-03-21 08:00 | 2021-03-22 17:00 | 2d | finish no earlier than 2022-03-17 17:00 | 王宇帆; 沈芳莉; 魏鹏; 王松; 许逸飞 | 8h | 8h |
| 15 | 1.1.13 | 评审项目计划 |  | 0.5d | 2022-03-17 08:00 A | 2022-03-17 12:00 A | 14 | 100% |  | 2021-03-23 08:00 | 2021-03-23 12:00 | 0.5d |  | 叶冬梅; 王宇帆; 魏鹏; 沈芳莉; 王松 | 20h | 20h |
| 16 | 1.1.14 | 修改项目计划 |  | 0.25d | 2022-03-17 08:00 A | 2022-03-17 10:00 A | 15 | 100% |  | 2021-03-23 13:00 | 2021-03-23 17:00 | 0.5d |  | 王宇帆 | 2h | 2h |
| 17 | 1.1.15 | 审批项目计划 |  | 0.12d | 2022-03-17 08:00 A | 2022-03-17 09:00 A | 16 | 100% |  | 2021-03-24 08:00 | 2021-03-24 12:00 | 0.5d |  | 叶冬梅; 王宇帆 | 2h | 2h |
| 18 | 1.1.16 | 计划阶段完成 | milestone | 0d | 2022-03-17 08:00 A | 2022-03-17 08:00 A | 17 | 100% |  | 2021-03-24 12:00 | 2021-03-24 12:00 | 0d | start no earlier than 2020-08-24 08:00 |  |  |  |
| 19 | 1.2 | **需求讨论阶段** |  | 23d | 2022-03-18 08:00 A | 2022-04-14 17:00 A |  | 100% |  | 2021-03-25 08:00 | 2021-04-12 12:00 | 17.5d |  |  | 148h | 148h |
| 20 | 1.2.1 | 组建需求调研小组 |  | 0.5d | 2022-03-18 08:00 A | 2022-03-18 12:00 A | 18 | 100% |  | 2021-03-25 08:00 | 2021-03-25 10:00 | 0.25d | finish no earlier than 2022-04-16 17:00 | 王宇帆 | 4h | 4h |
| 21 | 1.2.2 | 制订需求调研计划 |  | 0.5d | 2022-03-18 08:00 A | 2022-03-18 12:00 A | 20 | 100% |  | 2021-03-25 10:00 | 2021-03-25 12:00 | 0.25d | finish no earlier than 2021-03-19 17:00 | 王宇帆 | 4h | 4h |
| 22 | 1.2.3 | 需求调研 | manual | 5d | 2022-03-19 08:00 A | 2022-03-24 17:00 A | 21 | 100% |  | 2021-03-25 13:00 | 2021-03-29 12:00 | 4d | finish no earlier than 2022-05-06 17:00 | 王宇帆 | 40h | 40h |
| 23 | 1.2.4 | 需求分析 | manual | 2d | 2022-03-25 08:00 A | 2022-03-28 17:00 A | 22 | 100% |  | 2021-03-29 13:00 | 2021-03-31 12:00 | 2d | finish no earlier than 2022-05-11 17:00 | 王宇帆 | 16h | 16h |
| 24 | 1.2.5 | 编制产品规格说明书 | manual | 5d | 2022-03-29 08:00 A | 2022-04-08 17:00 A | 23 | 100% |  | 2021-04-02 13:00 | 2021-04-09 12:00 | 7d | start no earlier than 2022-03-29 08:00 | 王宇帆 | 40h | 40h |
| 25 | 1.2.6 | 评审产品规格说明书 |  | 1d | 2022-04-11 08:00 A | 2022-04-11 17:00 A | 24 | 100% |  | 2021-04-09 13:00 | 2021-04-09 17:00 | 0.5d | finish no earlier than 2021-04-07 17:00 | 王宇帆; 魏鹏; 沈芳莉 | 24h | 24h |
| 26 | 1.2.7 | 修改产品规格说明书 | manual | 2d | 2022-04-12 08:00 A | 2022-04-13 17:00 A | 25 | 100% |  | 2021-04-10 08:00 | 2021-04-10 17:00 | 1d |  | 王宇帆 | 16h | 16h |
| 27 | 1.2.8 | 确认需求规格说明书 | manual | 0.12d | 2022-04-14 08:00 A | 2022-04-14 09:00 A | 26 | 100% |  | 2021-04-12 08:00 | 2021-04-12 10:00 | 0.25d |  | 魏鹏; 王松 | 2h | 2h |
| 28 | 1.2.9 | 更新量化项目管理表 | manual | 1d | 2022-04-14 08:00 A | 2022-04-14 17:00 A | 27 | 100% |  | 2021-04-12 10:00 | 2021-04-12 12:00 | 0.25d | finish no earlier than 2022-06-01 17:00 | 王宇帆 | 2h | 2h |
| 29 | 1.2.10 | 需求阶段完成 | milestone | 0d | 2022-04-14 08:00 A | 2022-04-14 17:00 A | 28 | 100% |  | 2021-04-12 12:00 | 2021-04-12 12:00 | 0d | finish no earlier than 2022-04-14 17:00 | 许逸飞 |  |  |

| ID | WBS | Task | Type | Duration | Start | Finish | Predecessors | Complete | Actual finish | Baseline start | Baseline finish | Baseline duration | Constraint | Resources | Work | Actual work |
| --- | --- | --- | --- | --- | --- | --- | --- | --- | --- | --- | --- | --- | --- | --- | --- | --- |
| 30 | 1.3 | **系统设计阶段** |  | 21d | 2022-04-15 08:00 A | 2022-05-12 17:00 |  | 100% | 2022-05-12 10:00 | 2021-04-13 08:00 | 2021-05-10 17:00 | 24d |  |  | 252h | 252h |
| 31 | 1.3.1 | 技术解决方案 |  | 2d | 2022-04-15 08:00 A | 2022-04-16 17:00 A |  | 100% |  | 2021-04-13 08:00 | 2021-04-14 17:00 | 2d | start no earlier than 2021-07-07 08:00 |  | 16h | 16h |
| 32 | 1.3.2 | 评审技术方案 |  | 1d | 2022-04-18 08:00 A | 2022-04-18 17:00 A | 31 | 100% |  | 2021-04-15 08:00 | 2021-04-15 10:00 | 0.25d | start no earlier than 2013-04-07 08:00 | 许逸飞; 王宇帆; 魏鹏; 沈芳莉; 王松 | 40h | 40h |
| 33 | 1.3.3 | 软件设计 |  | 13d | 2022-04-19 08:00 A | 2022-05-06 17:00 A | 32 | 100% |  | 2021-04-28 10:00 | 2021-05-03 10:00 | 3d | finish no earlier than 2021-12-25 17:00 | 魏鹏 | 104h | 104h |
| 34 | 1.3.4 | 评审设计说明书 |  | 2d | 2022-05-09 08:00 A | 2022-05-10 17:00 A | 33 | 100% |  | 2021-05-06 10:00 | 2021-05-09 10:00 | 2d |  | 许逸飞; 王宇帆; 魏鹏; 沈芳莉; 王松 | 80h | 80h |
| 35 | 1.3.5 | 修改设计说明书 | manual | 1d | 2022-05-11 08:00 A | 2022-05-11 17:00 A | 34 | 100% |  | 2021-05-09 10:00 | 2021-05-10 10:00 | 1d | finish no earlier than 2022-07-04 17:00 | 魏鹏 | 8h | 8h |
| 36 | 1.3.6 | 确认设计内容 |  | 0.25d | 2022-05-12 08:00 A | 2022-05-12 10:00 A | 35 | 100% |  | 2021-05-10 10:00 | 2021-05-10 15:00 | 0.5d | start no earlier than 2013-04-27 08:00 | 魏鹏 | 2h | 2h |
| 37 | 1.3.7 | 更新量化项目管理表 |  | 0.25d | 2022-05-12 08:00 A | 2022-05-12 10:00 A | 36 | 100% |  | 2021-05-10 15:00 | 2021-05-10 17:00 | 0.25d | finish no earlier than 2021-05-10 17:00 | 王宇帆 | 2h | 2h |
| 38 | 1.3.8 | 设计阶段完成 | milestone | 0d | 2022-05-12 08:00 A | 2022-05-12 10:00 A | 37 | 100% |  | 2021-05-10 17:00 | 2021-05-10 17:00 | 0d | start no earlier than 2020-11-16 08:00 | 许逸飞 |  |  |
| 39 | 1.4 | **编码实现阶段** |  | 21d | 2022-05-13 08:00 A | 2022-06-10 17:00 A |  | 100% |  | 2021-05-11 08:00 | 2021-06-14 11:30 | 28.44d |  |  | 122.2h | 122.2h |
| 40 | 1.4.1 | 功能实现 |  | 18d | 2022-05-13 08:00 A | 2022-06-07 17:00 A | 36 | 100% |  | 2021-05-11 08:00 | 2021-06-01 17:00 | 18d | finish no earlier than 2022-06-07 17:00 | 魏鹏; 姚强; 王宇帆 | 114.2h | 114.2h |
| 41 | 1.4.2 | 代码走查 | manual | 1d | 2022-06-08 08:00 A | 2022-06-10 17:00 A | 40 | 100% |  | 2021-06-02 08:00 | 2021-06-04 17:00 | 3d | finish no earlier than 2022-06-10 17:00 | 魏鹏; 姚强; 王宇帆 | 8h | 8h |
| 42 | 1.5 | **产品集成阶段** |  | 3d | 2022-06-13 08:00 A | 2022-06-15 17:00 A |  | 100% |  | 2021-06-15 08:00 | 2021-06-22 10:00 | 7.25d |  |  | 27.9h | 27.9h |
| 43 | 1.5.1 | 制定产品集成方案 |  | 0.5d | 2022-06-13 08:00 A | 2022-06-13 12:00 A | 41 | 100% |  | 2021-06-15 08:00 | 2021-06-15 10:00 | 0.25d | start no earlier than 2021-06-15 08:00 | 魏鹏 | 4h | 4h |
| 44 | 1.5.2 | 审查接口兼容性 |  | 0.5d | 2022-06-13 08:00 A | 2022-06-13 15:00 A | 43 | 100% |  | 2021-06-15 10:00 | 2021-06-16 10:00 | 1d |  | 魏鹏 | 4h | 4h |
| 45 | 1.5.3 | 组装产品组件 | manual | 0.5d | 2022-06-14 08:00 A | 2022-06-14 15:00 A | 44 | 100% |  | 2021-06-16 10:00 | 2021-06-20 10:00 | 4d | finish no earlier than 2022-08-18 17:00 | 王宇帆 | 6h | 6h |
| 46 | 1.5.4 | 验证活动 |  | 1.25d | 2022-06-14 08:00 A | 2022-06-15 17:00 A | 45 | 100% |  | 2021-06-20 10:00 | 2021-06-21 10:00 | 1d | finish no earlier than 2022-06-15 17:00 | 王宇帆 | 10h | 10h |
| 47 | 1.5.5 | 更新量化项目管理表 | manual | 0.25d | 2022-06-15 08:00 A | 2022-06-15 15:54 A | 46 | 100% |  | 2021-06-21 10:00 | 2021-06-22 10:00 | 1d | start no earlier than 2022-06-15 08:00 | 王宇帆 | 2h | 2h |
| 48 | 1.5.6 | 产品交付 | manual | 0.24d | 2022-06-15 08:00 A | 2022-06-15 17:00 A | 46 | 100% |  | 2021-06-21 10:00 | 2021-06-22 10:00 | 1d | start no earlier than 2022-06-15 08:00 | 王宇帆 | 1.9h | 1.9h |
| 49 | 1.6 | **系统测试阶段** |  | 21d | 2022-06-16 08:00 A | 2022-07-14 17:00 A |  | 100% |  | 2021-06-23 08:00 | 2021-07-20 17:00 | 21d |  |  | 328h | 328h |
| 50 | 1.6.1 | 设计测试用例 |  | 3d | 2022-06-16 08:00 A | 2022-06-20 17:00 A | 48 | 100% |  | 2021-06-23 10:00 | 2021-06-29 10:00 | 4d | finish no earlier than 2022-01-29 17:00 | 沈芳莉 | 24h | 24h |
| 51 | 1.6.2 | 评审测试用例 |  | 1d | 2022-06-21 08:00 A | 2022-06-21 17:00 A | 50 | 100% |  | 2021-06-29 10:00 | 2021-06-29 15:00 | 0.5d | finish no earlier than 2022-01-30 17:00 | 许逸飞; 王宇帆; 沈芳莉; 魏鹏; 王松 | 40h | 40h |
| 52 | 1.6.3 | 修改测试用例 |  | 1d | 2022-06-22 08:00 A | 2022-06-22 17:00 A | 51 | 100% |  | 2021-06-29 15:00 | 2021-06-30 15:00 | 1d | finish no earlier than 2021-06-19 17:00 | 沈芳莉 | 8h | 8h |
| 53 | 1.6.4 | 搭建测试环境 |  | 2d | 2022-06-23 08:00 A | 2022-06-24 17:00 A | 52 | 100% |  | 2021-06-30 15:00 | 2021-07-01 17:00 | 1.25d |  | 沈芳莉; 魏鹏 | 32h | 32h |
| 54 | 1.6.5 | 执行测试 |  | 8d | 2022-06-27 08:00 A | 2022-07-06 17:00 A | 53 | 100% |  | 2021-07-02 08:00 | 2021-07-12 17:00 | 8d | finish no earlier than 2022-04-02 17:00 | 沈芳莉 | 96h | 96h |
| 55 | 1.6.6 | 修改BUG |  | 4d | 2022-07-06 08:00 A | 2022-07-11 17:00 A | 54 | 100% |  | 2021-07-13 08:00 | 2021-07-16 17:00 | 4d | finish no earlier than 2022-02-12 17:00 | 王宇帆; 魏鹏; 姚强 | 96h | 96h |
| 56 | 1.6.7 | 编写测试报告 |  | 1d | 2022-07-12 08:00 A | 2022-07-12 17:00 A | 55 | 100% |  | 2021-07-19 08:00 | 2021-07-19 17:00 | 1d | finish no earlier than 2022-02-13 17:00 | 沈芳莉 | 8h | 8h |
| 57 | 1.6.8 | 编写用户手册 |  | 2d | 2022-07-13 08:00 A | 2022-07-14 17:00 A | 56 | 100% |  |  |  |  |  | 魏鹏 | 16h | 16h |
| 58 | 1.6.9 | 更新量化项目管理表 |  | 1d | 2022-07-14 08:00 A | 2022-07-14 17:00 A | 57 | 100% |  | 2021-07-20 16:00 | 2021-07-20 17:00 | 0.12d |  | 王宇帆 | 8h | 8h |
| 59 | 1.6.10 | 测试完成 | milestone | 0d | 2022-07-14 08:00 A | 2022-07-14 08:00 A | 58 | 100% |  | 2021-07-20 17:00 | 2021-07-20 17:00 | 0d | start no earlier than 2014-06-26 08:00 |  |  |  |

| ID | WBS | Task | Type | Duration | Start | Finish | Predecessors | Complete | Baseline start | Baseline finish | Baseline duration | Constraint | Resources | Work | Actual work |
| --- | --- | --- | --- | --- | --- | --- | --- | --- | --- | --- | --- | --- | --- | --- | --- |
| 60 | 1.7 | **产品实施阶段** |  | 7d | 2022-07-15 08:00 A | 2022-07-22 17:00 A |  | 100% | 2021-07-21 08:00 | 2021-07-25 17:00 | 5d |  |  | 76h | 76h |
| 61 | 1.7.1 | 制订实施计划 | manual | 1d | 2022-07-15 08:00 A | 2022-07-15 17:00 A | 59 | 100% | 2021-07-21 08:00 | 2021-07-21 17:00 | 1d | finish no earlier than 2022-07-16 17:00 | 王宇帆; 沈芳莉 | 16h | 16h |
| 62 | 1.7.2 | 生成材料清单 |  | 1d | 2022-07-18 08:00 A | 2022-07-18 17:00 A | 61 | 100% | 2021-07-22 08:00 | 2021-07-22 12:00 | 0.5d | start no earlier than 2014-05-27 08:00 | 王宇帆 | 8h | 8h |
| 63 | 1.7.3 | 开发安装程序 | manual | 2d | 2022-07-19 08:00 A | 2022-07-20 17:00 A | 62 | 100% | 2021-07-22 13:00 | 2021-07-22 17:00 | 0.5d | start no earlier than 2022-07-19 08:00 | 沈芳莉; 王宇帆 | 16h | 16h |
| 64 | 1.7.4 | 系统试运行 | manual | 2d | 2022-07-21 08:00 A | 2022-07-22 17:00 A |  | 100% | 2021-07-24 12:00 | 2021-07-25 15:00 | 0.75d | start no earlier than 2022-07-21 08:00 | 王宇帆; 沈芳莉 | 32h | 32h |
| 65 | 1.7.5 | 更新量化项目管理表 |  | 0.5d | 2022-07-22 08:00 A | 2022-07-22 12:00 A |  | 100% | 2021-07-25 15:00 | 2021-07-25 17:00 | 0.25d | start no earlier than 2021-12-29 08:00 | 王宇帆 | 4h | 4h |
| 66 | 1.8 | **项目结项阶段** |  | 2d | 2022-07-23 08:00 A | 2022-07-24 17:00 A |  | 100% | 2021-07-26 08:00 | 2021-07-28 11:10 | 2.4d |  |  | 36h | 36h |
| 67 | 1.8.1 | 项目分析 |  | 0.5d | 2022-07-23 08:00 A | 2022-07-23 12:00 A | 65 | 100% | 2021-07-26 08:00 | 2021-07-26 16:30 | 0.94d | finish no earlier than 2022-07-23 17:00 | 王宇帆; 沈芳莉; 魏鹏 | 12h | 12h |
| 68 | 1.8.2 | 结项申请 |  | 0.5d | 2022-07-23 08:00 A | 2022-07-23 12:00 A | 67 | 100% | 2021-07-26 16:30 | 2021-07-27 11:30 | 0.5d |  | 王宇帆 | 4h | 4h |
| 69 | 1.8.3 | 项目成果移交 |  | 0.25d | 2022-07-24 08:00 A | 2022-07-24 10:00 A | 68 | 100% | 2021-07-27 11:30 | 2021-07-27 16:30 | 0.5d | finish no earlier than 2022-07-24 17:00 | 王宇帆 | 2h | 2h |
| 70 | 1.8.4 | 项目总结会 |  | 0.25d | 2022-07-24 08:00 A | 2022-07-24 10:00 A | 69 | 100% | 2021-07-27 16:30 | 2021-07-28 09:10 | 0.21d | finish no earlier than 2022-01-01 17:00 | 许逸飞; 王宇帆; 沈芳莉; 魏鹏; 王松 | 10h | 10h |
| 71 | 1.8.5 | 更新量化项目管理表 |  | 0.25d | 2022-07-24 08:00 A | 2022-07-24 10:00 A |  | 100% | 2021-07-28 09:10 | 2021-07-28 11:10 | 0.25d | start no earlier than 2022-01-01 08:00 | 王宇帆 | 2h | 2h |
| 72 | 1.8.6 | 关闭项目并转为技术支持 | manual | 0.25d | 2022-07-24 08:00 A | 2022-07-24 17:00 A | 71 | 100% | 2021-07-28 11:10 | 2021-07-28 11:10 | 0d | finish no earlier than 2022-10-15 17:00 | 王宇帆; 王松; 沈芳莉 | 6h | 6h |
