# 04项目进度表-计划

Schedule from MS Project, 2022-08-01 to 2022-12-29, A marks actual dates.
寰�杞�涓�鍥�

## Calendars

- 标准: Mon-Fri 08:00-12:00, 13:00-17:00; Sat-Sun off. Exceptions (off unless hours are given): 2022-08-06 08:00-12:00, 13:00-17:00, 2022-10-08 to 2022-10-09 08:00-12:00, 13:00-17:00, 2022-10-29 08:00-12:00, 13:00-17:00, 2022-12-24 to 2022-12-25 08:00-12:00, 13:00-17:00.

## Resources

| Resource |
| --- |
| 叶冬梅 |
| 王宇帆 |
| 许逸飞 |
| 沈芳莉 |
| 王松 |
| 毛可嘉 |
| 谭道刚 |

## Schedule

| ID | WBS | Task | Type | Duration | Start | Finish | Predecessors | Complete | Remaining | Actual finish | Baseline start | Baseline finish | Baseline duration | Constraint | Resources | Work | Actual work |
| --- | --- | --- | --- | --- | --- | --- | --- | --- | --- | --- | --- | --- | --- | --- | --- | --- | --- |
| 1 | 1 | **项目进度表** |  | 115d | 2022-08-01 08:00 A | 2022-12-29 17:00 |  | 99% | 0d |  | 2020-09-28 08:00 | 2021-03-14 17:00 | 126d? |  |  | 1380.27h | 1380.27h |
| 2 | 1.1 | **计划阶段** |  | 7d | 2022-08-01 08:00 A | 2022-08-08 17:00 |  | 100% |  | 2022-08-08 11:20 | 2020-09-28 08:00 | 2021-03-05 11:10 | 116.4d |  |  | 71.6h | 71.6h |
| 3 | 1.1.1 | **制定总体计划** |  | 5d | 2022-08-01 08:00 A | 2022-08-05 17:00 |  | 100% |  | 2022-08-05 10:00 | 2020-09-28 08:00 | 2020-10-01 10:00 | 3.25d |  |  | 53.6h | 53.6h |
| 4 | 1.1.1.1 | 项目启动 |  | 0.5d | 2022-08-01 08:00 A | 2022-08-01 12:00 A |  | 100% |  |  | 2020-09-28 08:00 | 2020-09-28 10:00 | 0.25d |  | 王宇帆; 许逸飞 [50%]; 沈芳莉 | 10h | 10h |
| 5 | 1.1.1.2 | 确定项目范围、属性 |  | 0.5d | 2022-08-01 08:00 A | 2022-08-01 15:00 A | 4 | 100% |  |  | 2020-09-28 10:00 | 2020-09-28 12:00 | 0.25d |  | 王宇帆; 沈芳莉 | 8h | 8h |
| 6 | 1.1.1.3 | 确定项目生命周期 |  | 0.5d | 2022-08-02 08:00 A | 2022-08-02 12:00 A | 5 | 100% |  |  | 2020-09-28 13:00 | 2020-09-28 15:00 | 0.25d |  | 王宇帆; 沈芳莉 | 8h | 8h |
| 7 | 1.1.1.4 | 定义项目过程 |  | 0.5d | 2022-08-02 08:00 A | 2022-08-02 15:00 A | 6 | 100% |  |  | 2020-09-28 15:00 | 2020-09-28 17:00 | 0.25d |  | 王宇帆; 沈芳莉 | 8h | 8h |
| 8 | 1.1.1.5 | 估算规模、工作量及成本 |  | 0.5d | 2022-08-03 08:00 A | 2022-08-03 12:00 A | 7 | 100% |  |  | 2020-09-29 08:00 | 2020-09-29 10:00 | 0.25d | start no earlier than 2020-04-29 08:00 | 王宇帆 | 4h | 4h |
| 9 | 1.1.1.6 | 制定里程碑计划 |  | 0.5d | 2022-08-03 08:00 A | 2022-08-03 12:00 A | 8 | 100% |  |  | 2020-09-29 10:00 | 2020-09-29 15:00 | 0.5d | start no earlier than 2020-04-30 08:00 | 沈芳莉 | 4h | 4h |
| 10 | 1.1.1.7 | 编制预算与进度 |  | 0.5d | 2022-08-04 08:00 A | 2022-08-04 12:00 A | 9 | 100% |  |  | 2020-09-29 15:00 | 2020-09-30 10:00 | 0.5d |  |  | 4h | 4h |
| 11 | 1.1.1.8 | 风险识别与分析 |  | 0.1d | 2022-08-04 08:00 A | 2022-08-04 08:48 A | 9 | 100% |  |  | 2020-09-29 15:00 | 2020-09-29 15:48 | 0.1d |  | 王宇帆; 许逸飞 | 1.6h | 1.6h |
| 12 | 1.1.1.9 | 确定项目质量过程性能目标QPPO |  | 0.25d | 2022-08-05 08:00 A | 2022-08-05 10:00 A | 10 | 100% |  |  | 2020-09-30 10:00 | 2020-09-30 12:00 | 0.25d |  | 王宇帆 | 2h | 2h |
| 13 | 1.1.1.10 | 编写量化项目管理表 |  | 0.25d | 2022-08-05 08:00 A | 2022-08-05 10:00 A | 11 | 100% |  |  | 2020-09-29 15:48 | 2020-09-30 08:48 | 0.25d |  | 王宇帆 | 2h | 2h |
| 14 | 1.1.1.11 | 定制总体开发计划 |  | 0.25d | 2022-08-05 08:00 A | 2022-08-05 10:00 A | 12 | 100% |  |  | 2020-09-30 13:00 | 2020-09-30 15:00 | 0.25d | finish no earlier than 2022-01-08 17:00 | 王宇帆 | 2h | 2h |
| 15 | 1.1.2 | **制订从属计划** |  | 2d | 2022-08-06 08:00 A | 2022-08-08 17:00 |  | 100% |  | 2022-08-08 10:00 | 2020-10-01 08:00 | 2020-10-04 17:00 | 4d |  |  | 11h | 11h |
| 16 | 1.1.2.1 | 制订配置管理及QA计划 |  | 0.25d | 2022-08-06 08:00 A | 2022-08-06 10:00 A | 14 | 100% |  |  | 2020-09-30 15:00 | 2020-10-01 11:00 | 0.62d | finish no earlier than 2022-08-06 17:00 | 沈芳莉 | 2h | 2h |
| 17 | 1.1.2.2 | 制订测试计划 |  | 0.12d | 2022-08-06 08:00 A | 2022-08-06 09:00 A | 16 | 100% |  |  | 2020-10-01 11:00 | 2020-10-01 14:00 | 0.25d | start no earlier than 2020-04-28 08:00 | 王宇帆; 沈芳莉 | 2h | 2h |
| 18 | 1.1.2.3 | 制订资源管理计划 |  | 0.25d | 2022-08-06 08:00 A | 2022-08-06 10:00 A | 17 | 100% |  |  | 2020-10-01 14:00 | 2020-10-02 09:00 | 0.5d | finish no earlier than 2020-04-30 17:00 | 沈芳莉 | 2h | 2h |
| 19 | 1.1.2.4 | 制订风险管理计划 |  | 0.25d | 2022-08-06 08:00 A | 2022-08-06 10:00 A | 18 | 100% |  |  | 2020-10-02 09:00 | 2020-10-02 14:00 | 0.5d | finish no earlier than 2020-04-30 17:00 | 王宇帆 | 2h | 2h |
| 20 | 1.1.2.5 | 完善资源管理及风险管理计划 | manual | 0.02d | 2022-08-08 08:00 A | 2022-08-08 08:07 A | 19 | 100% |  |  | 2020-10-03 08:00 | 2020-10-03 08:30 | 0.06d | start no earlier than 2022-08-08 08:00 | 王宇帆; 沈芳莉 | 1h | 1h |
| 21 | 1.1.2.6 | 制订干系人沟通与协调计划 |  | 0.25d | 2022-08-08 08:00 A | 2022-08-08 10:00 A | 20 | 100% |  |  | 2020-10-03 08:30 | 2020-10-03 13:30 | 0.5d | finish no earlier than 2020-04-30 17:00 | 王宇帆 | 2h | 2h |
| 22 | 1.1.3 | 评审项目计划 |  | 0.25d | 2022-08-08 08:00 A | 2022-08-08 11:20 A | 21 | 100% |  |  | 2020-10-03 13:30 | 2020-10-03 14:10 | 0.08d | start no earlier than 2020-04-29 08:00 | 沈芳莉; 王宇帆; 王松 [50%]; 叶冬梅 [50%] | 4h | 4h |
| 23 | 1.1.4 | 修改项目计划 |  | 0.12d | 2022-08-08 08:00 A | 2022-08-08 09:00 A | 22 | 100% |  |  | 2020-10-03 14:10 | 2020-10-04 11:10 | 0.75d | finish no earlier than 2020-04-30 17:00 | 王宇帆 | 1h | 1h |
| 24 | 1.1.5 | 审批项目计划 |  | 0.25d | 2022-08-08 08:00 A | 2022-08-08 10:00 A | 23 | 100% |  |  | 2020-10-04 11:10 | 2020-10-05 11:10 | 0.17d | finish no earlier than 2021-11-30 17:00 | 叶冬梅 [50%] | 1h | 1h |
| 25 | 1.1.6 | 计划阶段完成 |  | 0.12d | 2022-08-08 08:00 A | 2022-08-08 09:00 A |  | 100% |  |  | 2020-10-05 11:10 | 2020-10-05 11:10 | 0d | start no earlier than 2022-01-10 08:00 | 许逸飞 | 1h | 1h |

| ID | WBS | Task | Type | Duration | Start | Finish | Predecessors | Complete | Remaining | Actual finish | Baseline start | Baseline finish | Baseline duration | Total slack | Free slack | Constraint | Resources | Work | Actual work |
| --- | --- | --- | --- | --- | --- | --- | --- | --- | --- | --- | --- | --- | --- | --- | --- | --- | --- | --- | --- |
| 26 | 1.2 | **需求阶段** |  | 22d | 2022-08-09 08:00 A | 2022-09-07 17:00 |  | 100% |  | 2022-09-07 12:00 | 2020-10-06 08:00 | 2020-11-11 12:00 | 26.5d |  |  |  |  | 248h | 248h |
| 27 | 1.2.1 | 组建需求调研小组 |  | 0.5d | 2022-08-09 08:00 A | 2022-08-09 12:00 A | 25 | 100% |  |  | 2020-10-06 08:00 | 2020-10-06 17:00 | 1d |  |  | start no earlier than 2020-10-06 08:00 | 王宇帆 | 4h | 4h |
| 28 | 1.2.2 | 制订需求调研计划 |  | 0.5d | 2022-08-09 08:00 A | 2022-08-09 12:00 A | 27 | 100% |  |  | 2020-10-07 08:00 | 2020-10-07 17:00 | 1d |  |  |  | 王宇帆 | 4h | 4h |
| 29 | 1.2.3 | 需求调研 | manual | 2.5d | 2022-08-10 08:00 A | 2022-08-12 12:00 A | 28 | 100% |  |  | 2020-10-07 08:00 | 2020-10-15 17:00 | 1d |  |  |  | 王宇帆 | 20h | 20h |
| 30 | 1.2.4 | 需求分析 |  | 2d | 2022-08-15 08:00 A | 2022-08-16 17:00 A | 29 | 100% |  |  | 2020-10-16 08:00 | 2020-10-21 17:00 | 4d |  |  | finish no earlier than 2022-01-16 17:00 | 王宇帆 | 16h | 16h |
| 31 | 1.2.5 | 编制产品规格说明书 |  | 10d | 2022-08-17 08:00 A | 2022-08-30 17:00 A | 30 | 100% |  |  | 2020-10-29 08:00 | 2020-11-05 17:00 | 6d |  |  | finish no earlier than 2022-01-23 17:00 | 王宇帆 [266.7%] | 96h | 96h |
| 32 | 1.2.6 | 评审产品规格说明书 | manual | 2d | 2022-08-31 08:00 A | 2022-09-01 17:00 A | 31 | 100% |  |  | 2020-11-06 08:00 | 2020-11-09 17:00 | 2d |  |  | start no earlier than 2022-08-31 08:00 | 王宇帆; 沈芳莉; 谭道刚; 王松; 毛可嘉; 许逸飞; 叶冬梅 | 72h | 72h |
| 33 | 1.2.7 | 修改产品规格说明书 |  | 2d | 2022-09-02 08:00 A | 2022-09-05 17:00 A | 32 | 100% |  |  | 2020-11-10 08:00 | 2020-11-10 17:00 | 1d |  |  | start no earlier than 2020-05-20 08:00 | 王宇帆 | 12h | 12h |
| 34 | 1.2.8 | 确认需求规格说明书 |  | 1d | 2022-09-06 08:00 A | 2022-09-06 17:00 A | 33 | 100% |  |  | 2020-11-11 08:00 | 2020-11-11 10:00 | 0.25d |  |  | start no earlier than 2020-05-20 08:00 | 王宇帆; 沈芳莉 | 16h | 16h |
| 35 | 1.2.9 | 更新量化项目管理表 |  | 0.5d | 2022-09-07 08:00 A | 2022-09-07 12:00 A | 34 | 100% |  |  | 2020-11-11 10:00 | 2020-11-11 12:00 | 0.25d |  |  |  | 王宇帆 | 4h | 4h |
| 36 | 1.2.10 | 需求阶段完成 |  | 0.5d | 2022-09-07 08:00 A | 2022-09-07 12:00 A | 34 | 100% |  |  | 2020-11-11 10:00 | 2020-11-11 10:00 | 0d |  |  | start no earlier than 2020-05-21 08:00 | 许逸飞 | 4h | 4h |
| 37 | 1.3 | **设计阶段** |  | 22d | 2022-09-08 08:00 A | 2022-10-07 17:00 | 26 | 99% | 0d |  | 2020-11-12 08:00 | 2020-12-10 10:00 | 20.25d |  |  |  |  | 208h | 208h |
| 38 | 1.3.1 | 技术解决方案 |  | 2d | 2022-09-08 08:00 A | 2022-09-09 17:00 A | 36 | 100% |  |  | 2020-11-12 08:00 | 2020-11-16 17:00 | 3d |  |  | finish no earlier than 2022-01-29 17:00 | 毛可嘉 | 16h | 16h |
| 39 | 1.3.2 | 评审技术解决方案 | manual | 1d | 2022-09-12 08:00 A | 2022-09-12 17:00 | 33 | 99% | 0d |  | 2020-11-17 08:00 | 2020-11-17 17:00 | 1d |  |  | start no earlier than 2022-09-12 08:00 | 王松; 沈芳莉; 毛可嘉 | 16h | 16h |
| 40 | 1.3.3 | 编写设计说明书 |  | 11d | 2022-09-13 08:00 A | 2022-09-27 17:00 A | 39 | 100% |  |  | 2020-11-18 08:00 | 2020-12-02 17:00 | 11d |  |  | finish no earlier than 2022-02-05 17:00 | 毛可嘉 | 88h | 88h |
| 41 | 1.3.4 | 评审设计说明书 | manual | 2d | 2022-09-28 08:00 A | 2022-09-29 17:00 A | 40 | 100% |  |  | 2020-12-03 08:00 | 2020-12-03 17:00 | 1d |  |  |  | 王宇帆; 王松; 沈芳莉; 谭道刚; 毛可嘉; 叶冬梅 | 72h | 72h |
| 42 | 1.3.5 | 修改设计说明书 |  | 1.5d | 2022-09-29 08:00 A | 2022-09-30 12:00 A | 41 | 100% |  |  | 2020-12-04 08:00 | 2020-12-09 17:00 | 4d |  |  |  | 毛可嘉 | 12h | 12h |
| 43 | 1.3.6 | 更新量化项目管理表 |  | 0.25d | 2022-09-30 08:00 A | 2022-09-30 10:00 A | 42 | 100% |  |  | 2020-12-10 08:00 | 2020-12-10 10:00 | 0.25d |  |  |  | 王宇帆 | 2h | 2h |
| 44 | 1.3.7 | 设计阶段完成 |  | 0.25d | 2022-09-30 08:00 A | 2022-09-30 10:00 A | 43 | 100% |  |  | 2020-12-10 10:00 | 2020-12-10 10:00 | 0d |  |  |  | 许逸飞 | 2h | 2h |
| 45 | 1.4 | **编码阶段** |  | 29d | 2022-10-08 08:00 A | 2022-11-14 17:00 | 37 | 99% | 0d |  | 2020-12-11 08:00 | 2021-01-27 17:00 | 34d |  |  |  |  | 464h | 464h |
| 46 | 1.4.1 | 功能实现 |  | 28d | 2022-10-08 08:00 A | 2022-11-11 17:00 A |  | 100% |  |  | 2020-12-11 08:00 | 2021-01-14 17:00 | 25d |  |  | finish no earlier than 2022-11-11 17:00 | 谭道刚; 毛可嘉; 王宇帆 | 448h | 448h |
| 47 | 1.4.2 | 代码走查 |  | 2d | 2022-11-11 08:00 A | 2022-11-14 17:00 |  | 99% | 0d |  | 2021-01-15 08:00 | 2021-01-21 17:00 | 5d | 35d |  | finish no earlier than 2022-03-08 17:00 | 毛可嘉; 谭道刚; 王宇帆 | 16h | 16h |
| 48 | 1.5 | **产品集成阶段** |  | 3d | 2022-11-15 08:00 A | 2022-11-17 17:00 |  | 99% | 0d |  | 2021-01-28 08:00 | 2021-02-04 17:00 | 6d |  |  |  |  | 24h | 24h |
| 49 | 1.5.1 | 制定产品集成方案 |  | 0.5d | 2022-11-15 08:00 A | 2022-11-15 12:00 |  | 99% | 0d |  | 2021-01-28 08:00 | 2021-01-29 17:00 | 2d | 34.5d |  | start no earlier than 2020-07-14 08:00 | 毛可嘉; 谭道刚 | 4h | 4h |
| 50 | 1.5.2 | 审查接口兼容性 |  | 0.5d | 2022-11-15 08:00 A | 2022-11-15 12:00 |  | 99% | 0d |  | 2021-02-01 08:00 | 2021-02-02 17:00 | 2d | 1.5d | 0.5d |  | 毛可嘉; 谭道刚 | 4h | 4h |
| 51 | 1.5.3 | 组装产品组件 |  | 1d | 2022-11-16 08:00 A | 2022-11-16 17:00 | 50 | 99% | 0d |  | 2021-02-03 08:00 | 2021-02-03 12:00 | 0.5d | 0.75d | 0d |  | 毛可嘉; 谭道刚 | 8h | 8h |
| 52 | 1.5.4 | 验证活动 |  | 0.75d | 2022-11-17 08:00 A | 2022-11-17 15:00 | 51 | 99% | 0d |  | 2021-02-03 13:00 | 2021-02-04 12:00 | 1d | 32.25d |  |  | 毛可嘉; 谭道刚 | 6h | 6h |
| 53 | 1.5.5 | 更新量化项目管理表 |  | 0.25d | 2022-11-17 08:00 A | 2022-11-17 17:00 A | 52 | 100% |  |  | 2021-02-04 17:00 | 2021-02-04 17:00 | 0d |  |  | start no earlier than 2021-01-29 08:00 | 王宇帆 | 2h | 2h |

| ID | WBS | Task | Duration | Start | Finish | Predecessors | Complete | Actual finish | Baseline start | Baseline finish | Baseline duration | Constraint | Resources | Work | Actual work |
| --- | --- | --- | --- | --- | --- | --- | --- | --- | --- | --- | --- | --- | --- | --- | --- |
| 54 | 1.6 | **测试阶段** | 25d | 2022-11-18 08:00 A | 2022-12-22 17:00 |  | 100% | 2022-12-22 12:00 | 2021-02-05 08:00 | 2021-03-03 17:00 | 19d |  |  | 256h | 256h |
| 55 | 1.6.1 | 设计测试用例 | 4d | 2022-11-18 08:00 A | 2022-11-23 17:00 A | 53 | 100% |  | 2021-02-08 10:00 | 2021-02-12 10:00 | 4d | finish no earlier than 2021-02-03 17:00 | 沈芳莉 | 32h | 32h |
| 56 | 1.6.2 | 评审测试用例 | 1d | 2022-11-24 08:00 A | 2022-11-24 17:00 A | 55 | 100% |  | 2021-02-12 10:00 | 2021-02-12 12:00 | 0.25d |  | 沈芳莉; 王宇帆; 毛可嘉 | 24h | 24h |
| 57 | 1.6.3 | 修改测试用例 | 1d | 2022-11-25 08:00 A | 2022-11-25 17:00 A | 56 | 100% |  | 2021-02-12 13:00 | 2021-02-15 12:00 | 1d |  | 沈芳莉 | 8h | 8h |
| 58 | 1.6.4 | 搭建测试环境 | 2d | 2022-11-28 08:00 A | 2022-11-29 17:00 A | 57 | 100% |  | 2021-02-15 13:00 | 2021-02-16 12:00 | 1d | finish no earlier than 2022-03-20 17:00 | 沈芳莉 | 16h | 16h |
| 59 | 1.6.5 | 执行测试 | 6d | 2022-11-30 08:00 A | 2022-12-07 17:00 A | 58 | 100% |  | 2021-02-16 13:00 | 2021-02-24 12:00 | 6d | start no earlier than 2014-05-13 08:00 | 沈芳莉 | 48h | 48h |
| 60 | 1.6.6 | 修改BUG及验证 | 7d | 2022-12-08 08:00 A | 2022-12-20 17:00 A | 59 | 100% |  | 2021-02-24 13:00 | 2021-03-02 12:00 | 4d |  | 沈芳莉; 毛可嘉 | 112h | 112h |
| 61 | 1.6.7 | 编写测试报告 | 1d | 2022-12-21 08:00 A | 2022-12-21 17:00 A | 60 | 100% |  | 2021-03-02 13:00 | 2021-03-02 15:00 | 0.25d | start no earlier than 2014-05-13 08:00 | 沈芳莉 | 8h | 8h |
| 62 | 1.6.8 | 更新量化项目管理表 | 0.5d | 2022-12-22 08:00 A | 2022-12-22 12:00 A | 61 | 100% |  | 2021-03-03 15:00 | 2021-03-03 17:00 | 0.25d |  | 王宇帆 | 4h | 4h |
| 63 | 1.6.9 | 测试完成 | 0.5d | 2022-12-22 08:00 A | 2022-12-22 12:00 A |  | 100% |  | 2021-03-03 17:00 | 2021-03-03 17:00 | 0d |  | 许逸飞 | 4h | 4h |
| 64 | 1.7 | **产品交付阶段** | 5d | 2022-12-23 08:00 A | 2022-12-27 17:00 |  | 100% | 2022-12-27 10:00 | 2021-03-04 08:00 | 2021-03-10 16:20 | 6.92d |  |  | 76.67h | 76.67h |
| 65 | 1.7.1 | 制订实施计划 | 0.5d | 2022-12-23 08:00 A | 2022-12-23 12:00 A | 63 | 100% |  | 2021-03-04 08:00 | 2021-03-04 09:00 | 0.12d | start no earlier than 2020-07-23 08:00 | 沈芳莉; 王宇帆; 毛可嘉 | 12h | 12h |
| 66 | 1.7.2 | 生成材料清单 | 0.25d | 2022-12-23 08:00 A | 2022-12-23 10:00 A | 65 | 100% |  | 2021-03-04 09:00 | 2021-03-04 11:00 | 0.25d | start no earlier than 2014-05-21 08:00 | 沈芳莉; 王宇帆 | 4h | 4h |
| 67 | 1.7.3 | 开发安装程序 | 1d | 2022-12-24 08:00 A | 2022-12-24 17:00 A | 66 | 100% |  | 2021-03-04 11:00 | 2021-03-04 12:00 | 0.12d | finish no earlier than 2022-12-24 17:00 | 沈芳莉; 王宇帆; 毛可嘉 | 24h | 24h |
| 68 | 1.7.4 | 编写用户手册 | 1d | 2022-12-24 08:00 A | 2022-12-24 17:00 A | 67 | 100% |  | 2021-03-07 08:00 | 2021-03-07 10:00 | 0.25d | finish no earlier than 2022-04-02 17:00 | 谭道刚 | 8h | 8h |
| 69 | 1.7.5 | 系统安装与初始化 | 1d | 2022-12-25 08:00 A | 2022-12-25 17:00 A | 68 | 100% |  | 2021-03-08 08:00 | 2021-03-08 12:00 | 0.5d | finish no earlier than 2022-12-25 17:00 | 沈芳莉; 王宇帆 | 16h | 16h |
| 70 | 1.7.6 | 系统试运行 | 0.75d | 2022-12-26 08:00 A | 2022-12-26 15:00 A | 69 | 100% |  | 2021-03-09 08:00 | 2021-03-09 17:00 | 1d | finish no earlier than 2022-04-04 17:00 | 沈芳莉; 毛可嘉 | 8h | 8h |
| 71 | 1.7.7 | 更新量化项目管理表 | 0.25d | 2022-12-27 08:00 A | 2022-12-27 10:00 A | 70 | 100% |  | 2021-03-10 08:00 | 2021-03-10 10:00 | 0.25d |  | 王宇帆 | 2h | 2h |
| 72 | 1.7.8 | 系统正式上线 | 0.17d | 2022-12-27 08:00 A | 2022-12-27 09:20 A | 71 | 100% |  | 2021-03-10 10:00 | 2021-03-10 16:20 | 0.67d | finish no earlier than 2020-07-27 17:00 | 沈芳莉; 毛可嘉 | 2.67h | 2.67h |
| 73 | 1.8 | **结项活动** | 2d | 2022-12-28 08:00 A | 2022-12-29 17:00 | 72 | 100% | 2022-12-29 15:00 | 2021-03-11 08:00 | 2021-03-14 12:00 | 3.5d |  |  | 32h | 32h |
| 74 | 1.8.1 | 项目分析 | 0.5d | 2022-12-28 08:00 A | 2022-12-28 12:00 A |  | 100% |  | 2021-03-11 08:00 | 2021-03-11 10:00 | 0.25d | start no earlier than 2021-03-11 08:00 | 王宇帆; 沈芳莉 | 8h | 8h |
| 75 | 1.8.2 | 项目成果移交 | 0.5d | 2022-12-28 08:00 A | 2022-12-28 15:00 A | 74 | 100% |  | 2021-03-13 15:00 | 2021-03-13 17:00 | 0.25d | finish no earlier than 2021-03-13 17:00 | 沈芳莉; 王宇帆 | 8h | 8h |
| 76 | 1.8.3 | 更新量化项目管理表 | 0.5d | 2022-12-29 08:00 A | 2022-12-29 12:00 A | 75 | 100% |  | 2021-03-14 08:00 | 2021-03-14 10:00 | 0.25d | finish no earlier than 2022-10-29 17:00 | 王宇帆; 沈芳莉 | 8h | 8h |
| 77 | 1.8.4 | 项目总结会关闭项目并转为项目支持 | 0.5d | 2022-12-29 08:00 A | 2022-12-29 15:00 A | 76 | 100% |  | 2021-03-14 10:00 | 2021-03-14 12:00 | 0.25d |  | 王宇帆; 沈芳莉 | 8h | 8h |
