# 04项目进度表-计划

Schedule from MS Project, 2022-03-01 to 2022-07-16, A marks actual dates.
寰�杞�涓�鍥�

## Calendars

- 标准: Mon-Fri 08:00-12:00, 13:00-17:00; Sat-Sun off. Exceptions (off unless hours are given): 2022-03-06 08:00-12:00, 13:00-17:00.

## Resources

| Resource |
| --- |
| 叶冬梅 |
| 王正宁 |
| 许逸飞 |
| 沈芳莉 |
| 王凯迪 |
| 王松 |
| 孙世刚 |

## Schedule

| ID | WBS | Task | Duration | Start | Finish | Predecessors | Complete | Remaining | Actual finish | Baseline start | Baseline finish | Baseline duration | Total slack | Constraint | Resources | Work | Actual work |
| --- | --- | --- | --- | --- | --- | --- | --- | --- | --- | --- | --- | --- | --- | --- | --- | --- | --- |
| 1 | 1 | **项目进度表** | 101d | 2022-03-01 08:00 A | 2022-07-16 17:00 |  | 99% | 0d |  | 2020-09-28 08:00 | 2021-03-14 17:00 | 126d? |  |  |  | 1516h | 1516h |
| 2 | 1.1 | **计划阶段** | 6d | 2022-03-01 08:00 A | 2022-03-07 17:00 |  | 99% | 0d |  | 2020-09-28 08:00 | 2021-03-05 11:10 | 116.4d |  |  |  | 56h | 56h |
| 3 | 1.1.1 | **制定总体计划** | 4d | 2022-03-01 08:00 A | 2022-03-04 17:00 A |  | 100% |  |  | 2020-09-28 08:00 | 2020-10-01 10:00 | 3.25d |  |  |  | 38h | 38h |
| 4 | 1.1.1.1 | 项目启动 | 0.14d | 2022-03-01 08:00 A | 2022-03-01 09:08 A |  | 100% |  |  | 2020-09-28 08:00 | 2020-09-28 10:00 | 0.25d |  |  | 王正宁; 许逸飞 [50%]; 沈芳莉; 王凯迪 | 4h | 4h |
| 5 | 1.1.1.2 | 确定项目范围、属性 | 0.12d | 2022-03-01 08:00 A | 2022-03-01 09:00 A | 4 | 100% |  |  | 2020-09-28 10:00 | 2020-09-28 12:00 | 0.25d |  |  | 王正宁; 沈芳莉 | 2h | 2h |
| 6 | 1.1.1.3 | 确定项目生命周期 | 0.08d | 2022-03-01 08:00 A | 2022-03-01 08:40 A | 5 | 100% |  |  | 2020-09-28 13:00 | 2020-09-28 15:00 | 0.25d |  |  | 王正宁; 王凯迪; 沈芳莉 | 2h | 2h |
| 7 | 1.1.1.4 | 定义项目过程 | 0.08d | 2022-03-02 08:00 A | 2022-03-02 08:40 A | 6 | 100% |  |  | 2020-09-28 15:00 | 2020-09-28 17:00 | 0.25d |  |  | 王正宁; 王凯迪; 沈芳莉 | 2h | 2h |
| 8 | 1.1.1.5 | 估算规模、工作量及成本 | 0.75d | 2022-03-02 08:00 A | 2022-03-02 15:00 A | 7 | 100% |  |  | 2020-09-29 08:00 | 2020-09-29 10:00 | 0.25d |  | start no earlier than 2020-04-29 08:00 | 王正宁 | 6h | 6h |
| 9 | 1.1.1.6 | 制定里程碑计划 | 0.25d | 2022-03-03 08:00 A | 2022-03-03 10:00 A | 8 | 100% |  |  | 2020-09-29 10:00 | 2020-09-29 15:00 | 0.5d |  | start no earlier than 2020-04-30 08:00 | 沈芳莉 | 2h | 2h |
| 10 | 1.1.1.7 | 编制预算与进度 | 0.25d | 2022-03-03 08:00 A | 2022-03-03 10:00 A | 9 | 100% |  |  | 2020-09-29 15:00 | 2020-09-30 10:00 | 0.5d |  |  |  | 2h | 2h |
| 11 | 1.1.1.8 | 风险识别与分析 | 0.08d | 2022-03-03 08:00 A | 2022-03-03 08:40 A | 9 | 100% |  |  | 2020-09-29 15:00 | 2020-09-29 15:48 | 0.1d |  | finish no earlier than 2021-11-17 10:00 | 王正宁; 许逸飞; 王凯迪 | 2h | 2h |
| 12 | 1.1.1.9 | 确定项目质量过程性能目标QPPO | 0.5d | 2022-03-03 08:00 A | 2022-03-03 12:00 A | 10 | 100% |  |  | 2020-09-30 10:00 | 2020-09-30 12:00 | 0.25d |  |  | 王正宁 | 4h | 4h |
| 13 | 1.1.1.10 | 编写量化项目管理表 | 0.5d | 2022-03-04 08:00 A | 2022-03-04 12:00 A | 11 | 100% |  |  | 2020-09-29 15:48 | 2020-09-30 08:48 | 0.25d |  |  | 王正宁 | 4h | 4h |
| 14 | 1.1.1.11 | 定制总体开发计划 | 1d | 2022-03-04 08:00 A | 2022-03-04 17:00 A | 12 | 100% |  |  | 2020-09-30 13:00 | 2020-09-30 15:00 | 0.25d |  | finish no earlier than 2021-11-18 17:00 | 王正宁 | 8h | 8h |
| 15 | 1.1.2 | **制订从属计划** | 2d | 2022-03-06 08:00 A | 2022-03-07 17:00 |  | 100% |  | 2022-03-07 12:00 | 2020-10-01 08:00 | 2020-10-04 17:00 | 4d |  |  |  | 10h | 10h |
| 16 | 1.1.2.1 | 制订配置管理及QA计划 | 0.12d | 2022-03-06 08:00 A | 2022-03-06 09:00 A | 14 | 100% |  |  | 2020-09-30 15:00 | 2020-10-01 11:00 | 0.62d |  | finish no earlier than 2022-03-06 17:00 | 王松; 许逸飞 | 2h | 2h |
| 17 | 1.1.2.2 | 制订测试计划 | 0.25d | 2022-03-06 08:00 A | 2022-03-07 10:00 A |  | 100% |  |  | 2020-10-01 11:00 | 2020-10-01 14:00 | 0.25d |  | start no earlier than 2021-09-11 08:00 | 沈芳莉 | 2h | 2h |
| 18 | 1.1.2.3 | 制订资源管理计划 | 0.25d | 2022-03-06 08:00 A | 2022-03-07 12:00 A | 17 | 100% |  |  | 2020-10-01 14:00 | 2020-10-02 09:00 | 0.5d |  | finish no earlier than 2021-04-15 17:00 | 王正宁 | 2h | 2h |
| 19 | 1.1.2.4 | 制订风险管理计划 | 0.25d | 2022-03-06 08:00 A | 2022-03-06 10:00 A | 18 | 100% |  |  | 2020-10-02 09:00 | 2020-10-02 14:00 | 0.5d |  | finish no earlier than 2020-04-30 17:00 | 王正宁 | 2h | 2h |
| 20 | 1.1.2.5 | 制订干系人沟通与协调计划 | 0.25d | 2022-03-07 08:00 A | 2022-03-07 10:00 A | 19 | 100% |  |  | 2020-10-03 08:30 | 2020-10-03 13:30 | 0.5d |  | finish no earlier than 2020-04-30 17:00 | 王正宁 | 2h | 2h |
| 21 | 1.1.3 | 评审项目计划 | 0.12d | 2022-03-07 08:00 A | 2022-03-07 13:56 | 20 | 99% | 0d |  | 2020-10-03 13:30 | 2020-10-03 14:10 | 0.08d | 94.38d | start no earlier than 2020-04-29 08:00 | 沈芳莉; 王正宁; 王凯迪; 王松 [50%]; 叶冬梅 [50%]; 孙世刚 | 3h | 3h |
| 22 | 1.1.4 | 修改项目计划 | 0.25d | 2022-03-07 08:00 A | 2022-03-07 10:00 A | 21 | 100% |  |  | 2020-10-03 14:10 | 2020-10-04 11:10 | 0.75d |  | finish no earlier than 2020-04-30 17:00 | 王正宁 | 2h | 2h |
| 23 | 1.1.5 | 审批项目计划 | 0.06d | 2022-03-07 08:00 A | 2022-03-07 08:30 A | 22 | 100% |  |  | 2020-10-04 11:10 | 2020-10-05 11:10 | 0.17d |  | finish no earlier than 2021-04-19 17:00 | 叶冬梅 [50%]; 沈芳莉; 王正宁; 王凯迪; 王松 [50%] | 2h | 2h |
| 24 | 1.1.6 | 计划阶段完成 | 0.12d | 2022-03-07 08:00 A | 2022-03-07 09:30 A | 23 | 100% |  |  | 2020-10-05 11:10 | 2020-10-05 11:10 | 0d |  | start no earlier than 2022-03-09 08:00 |  | 1h | 1h |

| ID | WBS | Task | Type | Duration | Start | Finish | Predecessors | Complete | Remaining | Actual finish | Baseline start | Baseline finish | Baseline duration | Constraint | Resources | Work | Actual work |
| --- | --- | --- | --- | --- | --- | --- | --- | --- | --- | --- | --- | --- | --- | --- | --- | --- | --- |
| 25 | 1.2 | **需求阶段** |  | 19d | 2022-03-08 08:00 A | 2022-04-01 17:00 |  | 100% |  | 2022-04-01 12:00 | 2020-10-06 08:00 | 2020-11-11 12:00 | 26.5d |  |  | 234h | 234h |
| 26 | 1.2.1 | 组建需求调研小组 |  | 0.5d | 2022-03-08 08:00 A | 2022-03-08 12:00 A | 24 | 100% |  |  | 2020-10-06 08:00 | 2020-10-06 17:00 | 1d | start no earlier than 2021-09-14 08:00 | 王正宁 | 4h | 4h |
| 27 | 1.2.2 | 制订需求调研计划 |  | 0.5d | 2022-03-08 08:00 A | 2022-03-08 12:00 A | 24 | 100% |  |  | 2020-10-07 08:00 | 2020-10-07 17:00 | 1d | start no earlier than 2021-09-14 08:00 | 王正宁 | 4h | 4h |
| 28 | 1.2.3 | 需求调研 | manual | 3d | 2022-03-09 08:00 A | 2022-03-11 17:00 A | 24 | 100% |  |  | 2020-10-07 08:00 | 2020-10-15 17:00 | 1d |  |  | 24h | 24h |
| 29 | 1.2.4 | 需求分析 |  | 2d | 2022-03-14 08:00 A | 2022-03-15 17:00 A | 28 | 100% |  |  | 2020-10-16 08:00 | 2020-10-21 17:00 | 4d | start no earlier than 2021-09-18 08:00 |  | 16h | 16h |
| 30 | 1.2.5 | 编制产品规格说明书 |  | 9d | 2022-03-16 08:00 A | 2022-03-28 17:00 A | 29 | 100% |  |  | 2020-10-29 08:00 | 2020-11-05 17:00 | 6d | finish no earlier than 2021-09-26 17:00 |  | 80h | 80h |
| 31 | 1.2.6 | 评审产品规格说明书 |  | 2d | 2022-03-29 08:00 A | 2022-03-30 17:00 A | 30 | 100% |  |  | 2020-11-06 08:00 | 2020-11-09 17:00 | 2d | finish no earlier than 2021-10-02 17:00 | 王正宁; 王凯迪; 沈芳莉; 王松; 孙世刚 | 80h | 80h |
| 32 | 1.2.7 | 修改产品规格说明书 |  | 1d | 2022-03-31 08:00 A | 2022-03-31 17:00 A | 31 | 100% |  |  | 2020-11-10 08:00 | 2020-11-10 17:00 | 1d | finish no earlier than 2021-10-03 17:00 | 王凯迪 | 8h | 8h |
| 33 | 1.2.8 | 确认需求规格说明书 |  | 0.5d | 2022-04-01 08:00 A | 2022-04-01 12:00 A | 32 | 100% |  |  | 2020-11-11 08:00 | 2020-11-11 10:00 | 0.25d | start no earlier than 2020-05-20 08:00 | 王正宁; 沈芳莉; 王凯迪 | 12h | 12h |
| 34 | 1.2.9 | 更新量化项目管理表 |  | 0.5d | 2022-04-01 08:00 A | 2022-04-01 12:00 A | 33 | 100% |  |  | 2020-11-11 10:00 | 2020-11-11 12:00 | 0.25d |  | 王正宁 | 4h | 4h |
| 35 | 1.2.10 | 需求阶段完成 | manual | 0.25d | 2022-04-01 08:00 A | 2022-04-01 10:00 A | 33 | 100% |  |  | 2020-11-11 10:00 | 2020-11-11 10:00 | 0d | start no earlier than 2022-04-01 08:00 | 许逸飞 | 2h | 2h |
| 36 | 1.3 | **设计阶段** |  | 19d | 2022-04-04 08:00 A | 2022-04-28 17:00 | 25 | 100% |  | 2022-04-28 16:12 | 2020-11-12 08:00 | 2020-12-10 10:00 | 20.25d |  |  | 256h | 256h |
| 37 | 1.3.1 | 技术解决方案 |  | 2d | 2022-04-04 08:00 A | 2022-04-05 17:00 A | 35 | 100% |  |  | 2020-11-12 08:00 | 2020-11-16 17:00 | 3d | start no earlier than 2020-11-12 08:00 | 王凯迪 | 16h | 16h |
| 38 | 1.3.2 | 评审技术解决方案 | manual | 1d | 2022-04-06 08:00 A | 2022-04-06 17:00 A | 37 | 100% |  |  | 2020-11-17 08:00 | 2020-11-17 17:00 | 1d | start no earlier than 2022-04-06 08:00 | 王凯迪; 王松; 沈芳莉; 许逸飞; 孙世刚; 王正宁 | 32h | 32h |
| 39 | 1.3.3 | 概要设计 |  | 3d | 2022-04-07 08:00 A | 2022-04-11 17:00 A | 38 | 100% |  |  | 2020-11-18 08:00 | 2020-12-02 17:00 | 11d | start no earlier than 2020-11-13 08:00 | 王凯迪 | 24h | 24h |
| 40 | 1.3.4 | 详细设计 |  | 7d | 2022-04-12 08:00 A | 2022-04-20 17:00 A | 39 | 100% |  |  |  |  |  | finish no earlier than 2021-10-15 17:00 | 王凯迪 | 56h | 56h |
| 41 | 1.3.5 | 数据库设计 |  | 3d | 2022-04-21 08:00 A | 2022-04-25 17:00 A | 40 | 100% |  |  |  |  |  |  | 王凯迪 | 24h | 24h |
| 42 | 1.3.6 | 评审设计说明书 |  | 2d | 2022-04-26 08:00 A | 2022-04-27 17:00 A | 41 | 100% |  |  | 2020-12-03 08:00 | 2020-12-03 17:00 | 1d | finish no earlier than 2021-10-23 17:00 | 王正宁; 王凯迪; 王松; 沈芳莉; 许逸飞; 孙世刚 | 80h | 80h |
| 43 | 1.3.7 | 修改设计说明书 |  | 1d | 2022-04-27 08:00 A | 2022-04-28 09:36 A | 42 | 100% |  |  | 2020-12-04 08:00 | 2020-12-09 17:00 | 4d |  | 王凯迪 [500%] | 16h | 16h |
| 44 | 1.3.8 | 更新量化项目管理表 |  | 0.5d | 2022-04-28 08:00 A | 2022-04-28 12:00 A | 43 | 100% |  |  | 2020-12-10 08:00 | 2020-12-10 10:00 | 0.25d |  | 王正宁 | 4h | 4h |
| 45 | 1.3.9 | 设计阶段完成 |  | 0.5d | 2022-04-28 08:00 A | 2022-04-28 16:12 A | 44 | 100% |  |  | 2020-12-10 10:00 | 2020-12-10 10:00 | 0d |  | 许逸飞 | 4h | 4h |
| 46 | 1.4 | **编码阶段** |  | 23d | 2022-04-29 08:00 A | 2022-05-31 17:00 |  | 99% | 0d |  | 2020-12-11 08:00 | 2021-01-27 17:00 | 34d |  |  | 568h | 568h |
| 47 | 1.4.1 | 功能实现 | manual | 22d | 2022-04-29 08:00 A | 2022-05-29 17:00 A |  | 100% |  |  | 2020-12-11 08:00 | 2021-01-14 17:00 | 25d |  | 孙世刚; 王凯迪; 王正宁 | 520h | 520h |
| 48 | 1.4.2 | 代码走查 | manual | 2d | 2022-05-30 08:00 A | 2022-05-31 17:00 |  | 99% | 0d |  | 2021-01-15 08:00 | 2021-01-21 17:00 | 5d | finish no earlier than 2022-05-31 17:00 | 孙世刚; 王凯迪; 王正宁 | 48h | 48h |

| ID | WBS | Task | Type | Duration | Start | Finish | Predecessors | Complete | Actual finish | Baseline start | Baseline finish | Baseline duration | Constraint | Resources | Work | Actual work |
| --- | --- | --- | --- | --- | --- | --- | --- | --- | --- | --- | --- | --- | --- | --- | --- | --- |
| 49 | 1.5 | **产品集成阶段** |  | 4d | 2022-06-01 08:00 A | 2022-06-06 17:00 A |  | 100% |  | 2021-01-28 08:00 | 2021-02-04 17:00 | 6d |  |  | 20h | 20h |
| 50 | 1.5.1 | 制定产品集成方案 |  | 0.5d | 2022-06-01 08:00 A | 2022-06-01 12:00 A |  | 100% |  | 2021-01-28 08:00 | 2021-01-29 17:00 | 2d | finish no earlier than 2022-02-13 17:00 | 孙世刚 | 4h | 4h |
| 51 | 1.5.2 | 审查接口兼容性 | manual | 0.5d | 2022-06-01 08:00 A | 2022-06-01 12:00 A | 50 | 100% |  | 2021-02-01 08:00 | 2021-02-02 17:00 | 2d | start no earlier than 2022-06-01 08:00 | 孙世刚 | 4h | 4h |
| 52 | 1.5.3 | 组装产品组件 | manual | 0.75d | 2022-06-02 08:00 A | 2022-06-02 17:00 A | 51 | 100% |  | 2021-02-03 08:00 | 2021-02-03 12:00 | 0.5d | start no earlier than 2022-06-02 08:00 | 孙世刚 | 4h | 4h |
| 53 | 1.5.4 | 验证活动 |  | 0.5d | 2022-06-03 08:00 A | 2022-06-03 17:00 A | 52 | 100% |  | 2021-02-03 13:00 | 2021-02-04 12:00 | 1d | finish no earlier than 2021-11-21 17:00 | 孙世刚 | 4h | 4h |
| 54 | 1.5.5 | 更新量化项目管理表 | manual | 0.5d | 2022-06-06 08:00 A | 2022-06-06 17:00 A | 53 | 100% |  | 2021-02-04 17:00 | 2021-02-04 17:00 | 0d | start no earlier than 2022-06-06 08:00 | 王正宁 | 4h | 4h |
| 55 | 1.6 | **测试阶段** |  | 23d | 2022-06-07 08:00 A | 2022-07-07 17:00 |  | 100% | 2022-07-07 12:00 | 2021-02-05 08:00 | 2021-03-03 17:00 | 19d |  |  | 264h | 264h |
| 56 | 1.6.1 | 设计测试用例 |  | 3d | 2022-06-07 08:00 A | 2022-06-09 17:00 A | 54 | 100% |  | 2021-02-08 10:00 | 2021-02-12 10:00 | 4d | finish no earlier than 2021-02-03 17:00 | 沈芳莉 | 24h | 24h |
| 57 | 1.6.2 | 评审测试用例 |  | 1d | 2022-06-10 08:00 A | 2022-06-10 17:00 A | 56 | 100% |  | 2021-02-12 10:00 | 2021-02-12 12:00 | 0.25d |  | 沈芳莉; 王正宁; 孙世刚; 王凯迪 | 32h | 32h |
| 58 | 1.6.3 | 修改测试用例 |  | 1d | 2022-06-13 08:00 A | 2022-06-13 17:00 A | 57 | 100% |  | 2021-02-12 13:00 | 2021-02-15 12:00 | 1d |  | 沈芳莉 | 8h | 8h |
| 59 | 1.6.4 | 搭建测试环境 |  | 2d | 2022-06-14 08:00 A | 2022-06-15 17:00 A | 58 | 100% |  | 2021-02-15 13:00 | 2021-02-16 12:00 | 1d | finish no earlier than 2021-11-28 17:00 | 沈芳莉 | 16h | 16h |
| 60 | 1.6.5 | 执行测试 | manual | 7d | 2022-06-16 08:00 A | 2022-06-24 17:00 A | 59 | 100% |  | 2021-02-16 13:00 | 2021-02-24 12:00 | 6d | finish no earlier than 2022-10-10 17:00 | 沈芳莉 | 56h | 56h |
| 61 | 1.6.6 | 修改BUG及验证 |  | 7d | 2022-06-27 08:00 A | 2022-07-05 17:00 A | 60 | 100% |  | 2021-02-24 13:00 | 2021-03-02 12:00 | 4d |  | 沈芳莉; 孙世刚 | 112h | 112h |
| 62 | 1.6.7 | 编写测试报告 |  | 1d | 2022-07-06 08:00 A | 2022-07-06 17:00 A | 61 | 100% |  | 2021-03-02 13:00 | 2021-03-02 15:00 | 0.25d | finish no earlier than 2021-12-12 17:00 | 沈芳莉 | 8h | 8h |
| 63 | 1.6.8 | 更新量化项目管理表 |  | 0.5d | 2022-07-07 08:00 A | 2022-07-07 12:00 A | 62 | 100% |  | 2021-03-03 15:00 | 2021-03-03 17:00 | 0.25d |  | 王正宁 | 4h | 4h |
| 64 | 1.6.9 | 测试完成 |  | 0.5d | 2022-07-07 08:00 A | 2022-07-07 12:00 A |  | 100% |  | 2021-03-03 17:00 | 2021-03-03 17:00 | 0d |  |  | 4h | 4h |
| 65 | 1.7 | **产品交付阶段** |  | 4d | 2022-07-08 08:00 A | 2022-07-13 17:00 A |  | 100% |  | 2021-03-04 08:00 | 2021-03-10 16:20 | 6.92d |  |  | 74h | 74h |
| 66 | 1.7.1 | 制订实施计划 |  | 0.5d | 2022-07-08 08:00 A | 2022-07-08 12:00 A | 64 | 100% |  | 2021-03-04 08:00 | 2021-03-04 09:00 | 0.12d | start no earlier than 2021-10-01 08:00 | 沈芳莉; 王正宁; 孙世刚 | 12h | 12h |
| 67 | 1.7.2 | 生成材料清单 |  | 0.5d | 2022-07-08 08:00 A | 2022-07-08 17:00 A | 66 | 100% |  | 2021-03-04 09:00 | 2021-03-04 11:00 | 0.25d | start no earlier than 2014-05-21 08:00 | 沈芳莉; 王正宁 | 8h | 8h |
| 68 | 1.7.3 | 开发安装程序 |  | 1d | 2022-07-11 08:00 A | 2022-07-11 17:00 A | 67 | 100% |  | 2021-03-04 11:00 | 2021-03-04 12:00 | 0.12d | start no earlier than 2014-05-21 08:00 | 沈芳莉; 王正宁 | 16h | 16h |
| 69 | 1.7.4 | 编写用户手册 |  | 1d | 2022-07-11 08:00 A | 2022-07-11 17:00 A | 68 | 100% |  | 2021-03-07 08:00 | 2021-03-07 10:00 | 0.25d | finish no earlier than 2021-12-17 17:00 | 孙世刚 | 8h | 8h |
| 70 | 1.7.5 | 系统安装与初始化 |  | 1d | 2022-07-12 08:00 A | 2022-07-12 17:00 A |  | 100% |  | 2021-03-08 08:00 | 2021-03-08 12:00 | 0.5d | finish no earlier than 2021-10-26 17:00 | 沈芳莉; 王正宁 | 16h | 16h |
| 71 | 1.7.6 | 系统试运行 | manual | 0.5d | 2022-07-13 08:00 A | 2022-07-13 12:00 A | 70 | 100% |  | 2021-03-09 08:00 | 2021-03-09 17:00 | 1d | start no earlier than 2022-07-13 08:00 | 沈芳莉; 孙世刚 | 8h | 8h |
| 72 | 1.7.7 | 更新量化项目管理表 | milestone, manual | 0d | 2022-07-13 08:00 A | 2022-07-13 17:00 A | 69 | 100% |  | 2021-03-10 08:00 | 2021-03-10 10:00 | 0.25d | start no earlier than 2022-07-13 08:00 | 王正宁 |  |  |
| 73 | 1.7.8 | 系统正式上线 | manual | 0.25d | 2022-07-13 08:00 A | 2022-07-13 16:45 A | 72 | 100% |  | 2021-03-10 10:00 | 2021-03-10 16:20 | 0.67d | finish no earlier than 2021-10-08 17:00 | 沈芳莉; 孙世刚; 许逸飞 | 6h | 6h |

| ID | WBS | Task | Type | Duration | Start | Finish | Predecessors | Complete | Baseline start | Baseline finish | Baseline duration | Constraint | Resources | Work | Actual work |
| --- | --- | --- | --- | --- | --- | --- | --- | --- | --- | --- | --- | --- | --- | --- | --- |
| 74 | 1.8 | **结项活动** |  | 3d | 2022-07-14 08:00 A | 2022-07-16 17:00 A | 73 | 100% | 2021-03-11 08:00 | 2021-03-14 12:00 | 3.5d |  |  | 44h | 44h |
| 75 | 1.8.1 | 项目分析 |  | 1d | 2022-07-14 08:00 A | 2022-07-14 17:00 A |  | 100% | 2021-03-11 08:00 | 2021-03-11 10:00 | 0.25d | start no earlier than 2021-10-11 08:00 | 王正宁; 沈芳莉 | 16h | 16h |
| 76 | 1.8.2 | 项目成果移交 |  | 0.5d | 2022-07-15 08:00 A | 2022-07-15 15:00 A | 75 | 100% | 2021-03-13 15:00 | 2021-03-13 17:00 | 0.25d | start no earlier than 2021-10-12 08:00 | 沈芳莉; 王正宁 | 8h | 8h |
| 77 | 1.8.3 | 更新量化项目管理表 |  | 0.5d | 2022-07-15 08:00 A | 2022-07-15 12:00 A |  | 100% | 2021-03-14 08:00 | 2021-03-14 10:00 | 0.25d | start no earlier than 2021-10-12 08:00 | 王正宁; 沈芳莉 | 8h | 8h |
| 78 | 1.8.4 | 项目总结会关闭项目并转为项目支持 | manual | 1d | 2022-07-16 08:00 A | 2022-07-16 17:00 A |  | 100% | 2021-03-14 10:00 | 2021-03-14 12:00 | 0.25d | start no earlier than 2021-10-12 08:00 | 王正宁; 沈芳莉; 许逸飞 | 12h | 12h |
