# PI-ORG-OPM-07组织过程改进进度计划v1.0

Schedule from MS Project, 2020-04-01 to 2024-01-16, A marks actual dates.

## Calendars

- 标准: Mon-Fri 08:00-12:00, 13:00-17:00; Sat-Sun off.

## Resources

| Resource |
| --- |
| 咨询师 |
| AMTs |
| EPG |
| 软件测试组 |
| 相关项目组 |

## Schedule

| ID | WBS | Task | Type | Duration | Start | Finish | Predecessors | Complete | Remaining | Constraint | Resources | Work | Actual work |
| --- | --- | --- | --- | --- | --- | --- | --- | --- | --- | --- | --- | --- | --- |
| 1 | 1 | **CMMI V2.0 过程改进项目** |  | 729d | 2021-04-01 A | 2024-01-16 |  | 76% | 178.34d |  |  | 4192h | 2400h |
| 2 | 1.1 | **启动准备阶段** |  | 26d | 2021-04-01 A | 2021-05-06 A |  | 100% |  |  |  | 248h | 248h |
| 3 | 1.1.1 | 项目启动会议 |  | 1d | 2021-04-01 A | 2021-04-01 A |  | 100% |  | start no earlier than 2020-04-01 | EPG; 咨询师 | 16h | 16h |
| 4 | 1.1.2 | **差距分析** |  | 13d | 2021-04-02 A | 2021-04-20 A |  | 100% |  |  |  | 104h | 104h |
| 5 | 1.1.2.1 | 现有组织和项目文档审查 |  | 5d | 2021-04-02 A | 2021-04-08 A | 3 | 100% |  |  | 咨询师 | 40h | 40h |
| 6 | 1.1.2.2 | 组织人员访谈 |  | 5d | 2021-04-09 A | 2021-04-15 A | 5 | 100% |  |  | 咨询师 | 40h | 40h |
| 7 | 1.1.2.3 | 项目差距分析 |  | 3d | 2021-04-16 A | 2021-04-20 A | 6 | 100% |  |  | 咨询师 | 24h | 24h |
| 8 | 1.1.3 | **EPG章程和EPG人员维护** |  | 4d | 2021-04-21 A | 2021-04-26 A |  | 100% |  |  |  | 64h | 64h |
| 9 | 1.1.3.1 | EPG人员维护 |  | 2d | 2021-04-21 A | 2021-04-22 A | 7 | 100% |  |  | EPG; 咨询师 | 32h | 32h |
| 10 | 1.1.3.2 | EPG章程维护 |  | 2d | 2021-04-23 A | 2021-04-26 A | 9 | 100% |  |  | EPG; 咨询师 | 32h | 32h |
| 11 | 1.1.4 | **过程改进计划制定** |  | 8d | 2021-04-27 A | 2021-05-06 A |  | 100% |  |  |  | 64h | 64h |
| 12 | 1.1.4.1 | 组织过程改进计划制定 |  | 2d | 2021-04-27 A | 2021-04-28 A | 10 | 100% |  |  | EPG | 16h | 16h |
| 13 | 1.1.4.2 | 组织过程改进进度表制定 |  | 1d | 2021-04-29 A | 2021-04-29 A | 12 | 100% |  |  | EPG | 8h | 8h |
| 14 | 1.1.4.3 | 组织质量保证计划制定 |  | 1d | 2021-04-30 A | 2021-04-30 A | 13 | 100% |  |  | EPG | 8h | 8h |
| 15 | 1.1.4.4 | 组织配置管理计划制定 |  | 1d | 2021-05-01 A | 2021-05-03 A | 14 | 100% |  |  | EPG | 8h | 8h |
| 16 | 1.1.4.5 | 组织度量与分析计划更新 |  | 1d | 2021-05-04 A | 2021-05-04 A | 15 | 100% |  |  | EPG | 8h | 8h |
| 17 | 1.1.4.6 | 组织年度培训计划更新 |  | 1d | 2021-05-05 A | 2021-05-05 A | 16 | 100% |  |  | EPG | 8h | 8h |
| 18 | 1.1.4.7 | 过程改进计划评审并发布 |  | 1d | 2021-05-06 A | 2021-05-06 A | 17 | 100% |  |  | EPG | 8h | 8h |
| 19 | 1.1.5 | 项目启动阶段结束 | milestone | 0d | 2021-05-06 A | 2021-05-06 A | 18 | 100% |  |  | EPG; 咨询师 |  |  |
| 20 | 1.2 | **培训阶段** |  | 3.5d | 2021-05-07 A | 2021-05-12 A |  | 100% |  |  |  | 28h | 28h |
| 21 | 1.2.1 | **CMMI V2.0知识培训** |  | 2d | 2021-05-07 A | 2021-05-10 A |  | 100% |  |  |  | 16h | 16h |
| 22 | 1.2.1.1 | 过程管理类实践域培训[II & GOV& PAD & PCM & MPM] |  | 0.5d | 2021-05-07 A | 2021-05-07 A | 19 | 100% |  |  | 咨询师 | 4h | 4h |
| 23 | 1.2.1.2 | 工程类实践域培训(RDM & PQA & VV & PR & TS & PI) |  | 0.5d | 2021-05-07 A | 2021-05-07 A | 22 | 100% |  |  | 咨询师 | 4h | 4h |
| 24 | 1.2.1.3 | 项目管理类实践域培训[EST & PLAN & MC & RSK & OT] |  | 0.5d | 2021-05-10 A | 2021-05-10 A | 23 | 100% |  |  | 咨询师 | 4h | 4h |
| 25 | 1.2.1.4 | 支持类实践域培训[CAR & DAR & CM] |  | 0.5d | 2021-05-10 A | 2021-05-10 A | 24 | 100% |  |  | 咨询师 | 4h | 4h |

| ID | WBS | Task | Type | Duration | Start | Finish | Predecessors | Complete | Remaining | Total slack | Free slack | Constraint | Resources | Work | Actual work |
| --- | --- | --- | --- | --- | --- | --- | --- | --- | --- | --- | --- | --- | --- | --- | --- |
| 26 | 1.2.2 | **专题培训** |  | 1.5d | 2021-05-11 A | 2021-05-12 A |  | 100% |  |  |  |  |  | 12h | 12h |
| 27 | 1.2.2.1 | 项目管理培训 |  | 0.5d | 2021-05-11 A | 2021-05-11 A | 21 | 100% |  |  |  |  | 咨询师 | 4h | 4h |
| 28 | 1.2.2.2 | 工具Minitab以及Simulacion的使用培训 |  | 0.5d | 2021-05-11 A | 2021-05-11 A | 27 | 100% |  |  |  |  | 咨询师 | 4h | 4h |
| 29 | 1.2.2.3 | 统计过程控制方法（SPC）的应用 |  | 0.5d | 2021-05-12 A | 2021-05-12 A | 28 | 100% |  |  |  |  | 咨询师 | 4h | 4h |
| 30 | 1.3 | **组织标准过程优化、发布及培训** |  | 28d | 2021-05-12 A | 2021-06-18 |  | 97% | 0.97d |  |  |  |  | 256h | 240h |
| 31 | 1.3.1 | 过程管理类实践域过程维护[II & GOV& PAD & PCM & MPM] |  | 5d | 2021-05-12 A | 2021-05-18 A | 20 | 100% |  |  |  |  | EPG | 40h | 40h |
| 32 | 1.3.2 | 工程类实践域过程维护(RDM & PQA & VV & PR & TS & PI) |  | 5d | 2021-05-19 A | 2021-05-25 A | 31 | 100% |  |  |  |  | EPG | 40h | 40h |
| 33 | 1.3.3 | 项目管理类实践域过程维护[EST & PLAN & MC & RSK & OT] |  | 5d | 2021-05-26 A | 2021-06-01 A | 32 | 100% |  |  |  |  | EPG | 40h | 40h |
| 34 | 1.3.4 | 支持类实践域过程维护[CAR & DAR & CM] |  | 4d | 2021-06-02 A | 2021-06-07 A | 33 | 100% |  |  |  |  | EPG | 32h | 32h |
| 35 | 1.3.5 | 新版体系(OSSP V2.0.0)评审 |  | 3d | 2021-06-08 A | 2021-06-10 | 31SS | 67% | 1d | 64d |  |  | EPG; 咨询师 | 48h | 32h |
| 36 | 1.3.6 | 新版体系（OSSP V2.0.0）发布 |  | 2d | 2021-06-10 A | 2021-06-11 A | 35 | 100% |  |  |  |  | EPG | 16h | 16h |
| 37 | 1.3.7 | 新版体系培训 |  | 5d | 2021-06-12 A | 2021-06-18 A | 36 | 100% |  |  |  |  | EPG | 40h | 40h |
| 38 | 1.4 | **新体系试点与效果分析** |  | 144d | 2021-06-21 A | 2022-01-06 |  | 45% | 79.75d |  |  |  |  | 3120h | 1392h |
| 39 | 1.4.1 | 试点项目执行 |  | 130d | 2021-06-21 A | 2021-12-17 | 30 | 45% | 72d | 542d | 0d | finish no earlier than 2021-12-17 | 相关项目组 | 1040h | 464h |
| 40 | 1.4.2 | 试点与监控指导 |  | 130d | 2021-06-21 A | 2021-12-17 | 39SS | 45% | 72d | 542d |  | finish no earlier than 2021-12-17 | EPG; 咨询师 | 2080h | 928h |
| 41 | 1.5 | 2022年QPPO设定与下达 |  | 14d | 2021-12-20 A | 2022-01-06 A |  | 100% |  |  |  | finish no earlier than 2021-01-06 | EPG | 112h | 112h |
| 42 | 1.6 | **革新1设计、实施和部署** |  | 93d | 2022-01-07 A | 2022-05-17 A |  | 100% |  |  |  |  |  |  |  |
| 43 | 1.6.1 | 过程能力分析与革新方案识别 |  | 6d | 2022-01-07 A | 2022-01-14 A |  | 100% |  |  |  | start no earlier than 2021-01-07 |  |  |  |
| 44 | 1.6.2 | 革新试点实施（监控与辅导） |  | 80d | 2022-01-17 A | 2022-05-06 A | 43 | 100% |  |  |  |  |  |  |  |
| 45 | 1.6.3 | 试点效果分析 |  | 5d | 2022-05-06 A | 2022-05-12 A | 44 | 100% |  |  |  |  |  |  |  |
| 46 | 1.6.4 | 革新部署 |  | 2d | 2022-05-13 A | 2022-05-16 A | 45 | 100% |  |  |  |  |  |  |  |
| 47 | 1.6.5 | 部署监控及辅导 | manual | 93d | 2022-01-07 A | 2022-05-17 A | 46 | 100% |  |  |  |  |  |  |  |
| 48 | 1.7 | **革新2设计、实施和部署** |  | 153d | 2022-05-18 A | 2022-12-16 |  | 80% | 29.88d |  |  |  |  |  |  |
| 49 | 1.7.1 | 过程能力分析与革新方案识别 |  | 5d | 2022-05-18 A | 2022-05-24 A |  | 100% |  |  |  | start no earlier than 2021-09-07 |  |  |  |
| 50 | 1.7.2 | 革新试点实施（监控与辅导） |  | 137d | 2022-05-25 A | 2022-12-01 | 49 | 58% | 57d | 293d |  | finish no earlier than 2022-12-01 |  |  |  |
| 51 | 1.7.3 | 试点效果分析 |  | 5d | 2022-12-02 A | 2022-12-08 A | 50 | 100% |  |  |  |  |  |  |  |
| 52 | 1.7.4 | 革新部署 |  | 3d | 2022-12-08 A | 2022-12-12 | 51 | 67% | 1d | 286d |  |  |  |  |  |
| 53 | 1.7.5 | 部署实施监控及辅导 |  | 147d | 2022-05-18 A | 2022-12-12 A | 52 | 100% |  |  |  | finish no earlier than 2022-12-12 |  |  |  |
| 54 | 1.8 | 部署效果分析 |  | 4d | 2022-12-13 A | 2022-12-16 A | 42, 48 | 100% |  |  |  | start no earlier than 2022-02-22 |  |  |  |

| ID | WBS | Task | Duration | Start | Finish | Predecessors | Complete | Remaining | Actual start | Total slack | Constraint | Resources | Work | Actual work |
| --- | --- | --- | --- | --- | --- | --- | --- | --- | --- | --- | --- | --- | --- | --- |
| 55 | 1.9 | **预评估阶段** | 9d | 2022-12-19 A | 2022-12-29 A |  | 100% |  |  |  |  |  | 160h | 160h |
| 56 | 1.9.1 | 预评估准备 | 4d | 2022-12-19 A | 2022-12-22 A |  | 100% |  |  |  | start no earlier than 2022-03-08 | EPG; 咨询师 | 64h | 64h |
| 57 | 1.9.2 | 预评估 | 2d | 2022-12-23 A | 2022-12-26 A | 56 | 100% |  |  |  |  | EPG; 咨询师; AMTs | 48h | 48h |
| 58 | 1.9.3 | 预评估后改进指导 | 3d | 2022-12-27 A | 2022-12-29 A | 57 | 100% |  |  |  |  | EPG; 咨询师 | 48h | 48h |
| 59 | 1.10 | **正式评估阶段** | 6d | 2023-01-09 A | 2023-01-16 |  | 83% | 1d |  |  |  |  | 240h | 200h |
| 60 | 1.10.1 | CMMI V2.0 5级正式评估 | 6d | 2023-01-09 A | 2023-01-16 |  | 83% | 1d |  | 261d | finish no earlier than 2022-09-30 | AMTs; EPG; 软件测试组; 相关项目组; 咨询师 | 240h | 200h |
| 61 | 1.11 | **EPG季度例会** | 718d | 2020-04-01 | 2022-12-30 |  | 71% | 205.14d | 2021-06-30 |  |  |  | 28h | 20h |
| 62 | 1.11.1 | EPG季度报告 | 0.5d | 2021-06-30 A | 2021-06-30 A |  | 100% |  |  |  | start no earlier than 2021-06-30 | EPG | 4h | 4h |
| 63 | 1.11.2 | EPG季度报告 | 0.5d | 2021-09-30 A | 2021-09-30 A |  | 100% |  |  |  | start no earlier than 2021-09-30 | EPG | 4h | 4h |
| 64 | 1.11.3 | EPG季度报告 | 0.5d | 2021-12-31 A | 2021-12-31 A |  | 100% |  |  |  | start no earlier than 2021-12-31 | EPG | 4h | 4h |
| 65 | 1.11.4 | EPG季度报告 | 0.5d | 2022-03-31 A | 2022-03-31 A |  | 100% |  |  |  | start no earlier than 2022-03-31 | EPG | 4h | 4h |
| 66 | 1.11.5 | EPG季度报告 | 0.5d | 2022-06-30 A | 2022-06-30 A |  | 100% |  |  |  | start no earlier than 2022-03-31 | EPG | 4h | 4h |
| 67 | 1.11.9 | EPG季度报告 | 0.5d | 2022-09-30 | 2022-09-30 |  |  |  |  | 337.5d | start no earlier than 2022-09-30 | EPG | 4h |  |
| 68 | 1.11.9 | EPG季度报告 | 0.5d | 2022-12-30 | 2022-12-30 |  |  |  |  | 272.5d | start no earlier than 2022-12-30 | EPG | 4h |  |
